Schedule from OmniPlan.
Project start 2014-06-09

## Resources

| Resource | Group |
| --- | --- |
| Mark Bombalicki | staff |
| David Taylor | staff |
| Jon Saperia | staff |
| Eric Remington | staff |
| Joel Huang | staff |
| David Chan | staff |
| Unassigned | staff |

## Schedule

| ID | WBS | Task | Predecessors | Complete | Constraint | Resources | Work | Actual work |
| --- | --- | --- | --- | --- | --- | --- | --- | --- |
| 1 | 1 | Integer First Release |  |  |  | Jon Saperia | 8h |  |
| 2 | 2 | **User Logs into System directly.** |  |  |  |  |  |  |
| 3 | 2.1 | **Data Service** |  |  | start no earlier than 2014-06-04 |  |  |  |
| 4 | 2.1.1 | Allow User Log Out |  |  | start no earlier than 2014-06-04 | David Taylor | 8h |  |
| 5 | 2.2 | **User Interface** |  |  | start no earlier than 2014-06-04 |  |  |  |
| 6 | 2.2.1 | Add User Log Out |  |  | start no earlier than 2014-06-04 | Joel Huang | 16h |  |
| 7 | 3 | **Simple Service Element Discovery on a single subnet** |  |  |  |  |  |  |
| 8 | 3.1 | **Discovery Manager** |  |  | start no earlier than 2014-06-03 |  |  |  |
| 9 | 3.1.1 | Discovery of a device using hierarchical discovery |  |  |  | David Chan | 16h |  |
| 10 | 3.1.2 | Execution Stop Command During Discovery | 9 |  | start no earlier than 2014-06-03 | David Chan | 16h |  |
| 11 | 3.1.3 | Identify which objects in the Entity MIB and HR MIB and Interfaces MIB Modules to MAP | 10 |  | start no earlier than 2014-06-06 | David Chan | 4h |  |
| 12 | 3.1.4 | Generate an Unreachable Message During Subnet Discovery for an Existing Service Element | 11 |  | start no earlier than 2014-06-04 | David Chan | 16h |  |
| 13 | 3.1.5 | Complete Hierarchal containment discovery | 12 |  |  | David Chan | 8h |  |
| 14 | 3.1.6 | Implement MiB table polling and derterminate for service element type | 13 |  |  | David Chan | 8h |  |
| 15 | 3.1.7 | Implement mac to Ip address mapping | 14 |  | start no earlier than 2014-06-04 | David Chan | 16h |  |
| 16 | 3.1.8 | associate the basic service element type designed by loren | 15 |  |  | David Chan | 16h |  |
| 17 | 3.1.9 | Generate instance oid based mapping | 16 |  | start no earlier than 2014-06-04 | David Chan | 16h |  |
| 18 | 3.1.10 | Discovery unique identifier for each service element which includes the top level service element and the sub level service element | 17 | 100% |  | David Chan | 8h | 8h |
| 19 | 3.1.11 | Generate instance OID based on different mapping between MiB tables | 18 |  |  | David Chan | 8h |  |
| 20 | 3.1.12 | Identify Service Element (Routing Load Balance) | 19 |  |  | David Chan | 16h |  |
| 21 | 3.2 | **Data Service** |  |  | start no earlier than 2014-06-02 |  |  |  |
| 22 | 3.2.1 | Map IPv4 address to Interface as example of generic way to get mappings |  |  | start no earlier than 2014-06-04 | David Taylor | 8h |  |
| 23 | 3.2.2 | Integrate CAS plug-in and software into our System | 22 |  |  | David Taylor | 16h |  |
| 24 | 3.2.3 | Integrate LDAP Attribute Service while using CAS | 23 |  |  | David Taylor | 16h |  |
| 25 | 3.3 | Data Storage Functions |  |  | start no earlier than 2014-06-02 |  |  |  |
| 26 | 3.4 | Deployment |  |  | start no earlier than 2014-06-02 |  |  |  |

Notes:
- 2: Times New Roman / 0 / left / left-to-right / 36 / In some cases, a few operators will have 'root' access to integer. These users will be permitted to log into the system without and external authentication system like CAS. / Times New Roman / 0 / left / left-to-right / 36 / Implementing this first also gives us a way to get started with the system. It requires some amount of implementation of users etc. This will only implement as much as is needed.
- 7: Times New Roman / 0 / left / left-to-right / 36 / The idea is to do our first function end to end. After the user logs in, they will be able to start a discovery on a single subnet and find all the devices there. This will also include full service element discovery. / Times New Roman / 0 / left / left-to-right / 36 / This requires the implemenation of the SnmpVendorDiscoveryTemplate, ServiceElementDiscoveryManager, ServiceElementDiscoveryPolicy, SnmpVendorContainmentSelector, SnmpServiceElementRelationship, SnmpContainment, SnmpServiceElementTypeDiscriminator and SnmpLevelOID objects. It will also require the basic implementation of the Topology since that is how discovery stars and the IpTopologySeed. / Times New Roman / 0 / left / left-to-right / 36 / In addition to the ServiceElement and ServiceElementType implemenations required, the ServiceElementAccessManager must also be implemented to configure access (community strings) for devices. / Times New Roman / 0 / left / left-to-right / 36 / This will also include implemenation of the ServiceElementProtocolInstanceIdentifier.
- 10: Arial / 14 / left / left-to-right / 36 / After receiving stop command, the discovery manager should not make any new requests to devices.

| ID | WBS | Task | Predecessors | Complete | Constraint | Resources | Work | Actual work |
| --- | --- | --- | --- | --- | --- | --- | --- | --- |
| 27 | 3.5 | **Infrastructure** |  |  | start no earlier than 2014-06-04 |  |  |  |
| 28 | 3.5.1 | Import base data into build process (e.g., MIB Modules, Capabilities, ServiceElementTypes, etc. |  |  |  | Eric Remington | 16h |  |
| 29 | 3.6 | **Discovery Service** |  |  | start no earlier than 2014-06-02 |  |  |  |
| 30 | 3.6.1 | Server - send discovery errors and completion information to UI via API |  |  |  | David Taylor | 8h |  |
| 31 | 3.6.2 | Discovery - Start stop multiple discoveries | 30 |  |  | David Taylor | 16h |  |
| 32 | 3.6.3 | Server - Discovery status propagation via API | 31 |  |  | David Taylor | 24h |  |
| 33 | 3.6.4 | Discovery - Realtime status information of all discoveries in process | 32 |  |  | David Taylor | 8h |  |
| 34 | 3.6.5 | Save discovery status | 33 | 100% |  | David Taylor | 8h | 8h |
| 35 | 3.7 | **Domain Knowledge** |  |  | start no earlier than 2014-06-02 |  |  |  |
| 36 | 3.7.1 | Diagram & describe topology discovery |  |  |  | Jon Saperia | 16h |  |
| 37 | 3.7.2 | Load domain knowledge for CDP, IpRouteTable, VLANs |  |  | start no earlier than 2014-06-06 | Jon Saperia | 8h |  |
| 38 | 3.8 | Inventory Manager |  |  | start no earlier than 2014-06-02 |  |  |  |
| 39 | 3.9 | Report Service |  |  | start no earlier than 2014-06-02 |  |  |  |
| 40 | 3.10 | **User Interface** |  |  | start no earlier than 2014-06-02 |  |  |  |
| 41 | 3.10.1 | UI - Show discovery errors and completion |  |  |  | Joel Huang | 8h |  |
| 42 | 4 | **Create a multi-subnet service element and topology discovery and run** |  |  |  |  |  |  |
| 43 | 4.1 | Data Service |  |  | start no earlier than 2014-06-02 |  |  |  |
| 44 | 4.2 | **Data Storage Functions** |  |  | start no earlier than 2014-06-02 |  |  |  |
| 45 | 4.2.1 | INT-241 Save interdevice link |  |  |  | David Taylor | 8h |  |
| 46 | 4.3 | **Discovery Manager** |  |  | start no earlier than 2014-06-04 |  |  |  |
| 47 | 4.3.1 | Associate path and network with inter device link (Basic) |  |  |  | David Chan | 8h |  |
| 48 | 4.3.2 | Define Topology Discovery Process/Algorithm |  |  | start no earlier than 2014-06-04 | David Chan | 24h |  |
| 49 | 4.3.3 | Study MiBs related to network layers |  |  |  | David Chan | 16h |  |
| 50 | 4.3.4 | Topology element creation |  |  |  | David Chan | 8h |  |
| 51 | 4.3.5 | Implement ip routing for layer 3 inter device link |  |  |  | David Chan | 24h |  |
| 52 | 4.3.6 | Vlan study and implementation |  |  |  | David Chan | 8h |  |
| 53 | 4.3.7 | Implement Layer 3 Topology Algorithm |  |  | start no earlier than 2014-06-04 | David Chan | 24h |  |
| 54 | 4.3.8 | Implement VLAN Algorithm |  |  | start no earlier than 2014-06-04 | David Chan | 24h |  |
| 55 | 4.3.9 | implement level 2 topology base on a spanning tree |  |  |  | David Chan | 8h |  |
| 56 | 4.4 | Deployment |  |  | start no earlier than 2014-06-02 |  |  |  |
| 57 | 4.5 | Discovery Service |  |  | start no earlier than 2014-06-02 |  |  |  |
| 58 | 4.6 | API to GUI for Topology Information |  |  | start no earlier than 2014-06-04 | David Taylor | 24h |  |

Notes:
- 42: Times New Roman / 0 / left / left-to-right / 36 / The user wants an extended service element and layer 2/3 topology discovery of most of the environment that has many subnets. There are certain types of devices they want to include and others to exclude. / Times New Roman / 0 / left / left-to-right / 36 / If needed the TopologyElement and Path objects may be delayed from the previous simple service element on a single subnet story until this one. / Times New Roman / 0 / left / left-to-right / 36 / At this point the user is not controlling the configuration, it is set. Controlling the configuration of the discovery system is in the next story.

| ID | WBS | Task | Constraint | Resources | Work |
| --- | --- | --- | --- | --- | --- |
| 59 | 4.7 | **Domain Knowledge** | start no earlier than 2014-06-02 |  |  |
| 60 | 4.7.1 | Make the first version of the technology tree |  | Jon Saperia | 8h |
| 61 | 4.7.2 | Load domain knowledge for CDP, IpRouteTable, VLANs | start no earlier than 2014-06-04 | Jon Saperia | 200h |
| 62 | 4.8 | Inventory Manager | start no earlier than 2014-06-02 |  |  |
| 63 | 4.9 | Report Service | start no earlier than 2014-06-02 |  |  |
| 64 | 4.10 | **User Interface** | start no earlier than 2014-06-02 |  |  |
| 65 | 4.10.1 | Basic Multiple Level Zoom |  | Joel Huang | 8h |
| 66 | 4.10.2 | Show Device Service Elements with Single/Multiple Level Zoom |  | Joel Huang | 8h |
| 67 | 4.10.3 | Display Topology Information Based on Selection | start no earlier than 2014-06-04 | Joel Huang | 16h |
| 68 | 4.10.4 | Display Topology Information Based on Selection - Phase 2 | start no earlier than 2014-06-06 | Joel Huang | 16h |
| 69 | 4.10.5 | Display Topology Information Based on Selection - Phase 3 | start no earlier than 2014-06-06 | Joel Huang | 16h |
| 70 | 4.11 | Finish Design topology / discovery |  | Jon Saperia | 200h |
| 71 | 5 | **Configure the discovery system** |  |  |  |
| 72 | 5.1 | **Data Service** | start no earlier than 2014-06-02 |  |  |
| 73 | 5.1.1 | Schedule Mgr |  | David Taylor | 24h |
| 74 | 5.2 | Data Storage Functions | start no earlier than 2014-06-02 |  |  |
| 75 | 5.3 | Deployment | start no earlier than 2014-06-02 |  |  |
| 76 | 5.4 | **Discovery Service** | start no earlier than 2014-06-02 |  |  |
| 77 | 5.4.1 | Discovery - errors/progress |  | David Taylor | 16h |
| 78 | 5.4.2 | Discovery List |  | David Taylor | 8h |
| 79 | 5.4.3 | Discovery Stop |  | David Taylor | 8h |
| 80 | 5.4.4 | Discovery , Schedule, Get next runtime |  | David Taylor | 16h |
| 81 | 5.4.5 | Discovery, Defaults |  | David Taylor | 8h |
| 82 | 5.5 | Domain Knowledge | start no earlier than 2014-06-02 |  |  |
| 83 | 5.6 | Inventory Manager | start no earlier than 2014-06-02 |  |  |

Notes:
- 71: Times New Roman / 0 / left / left-to-right / 36 / The system has just been deployed and the user would like to set up a general discovery by defining the subnets, hops from the seed subnets to search, default community strings for SNMP and their priority on a global and per subnet basis, and which Service Element Types to exclude from the discovery. / Times New Roman / 0 / left / left-to-right / 36 / They are also able to control the technologies used in the topology discovery and what to look for in the ServiceElementDiscovery phase.

| ID | WBS | Task | Constraint | Resources | Work |
| --- | --- | --- | --- | --- | --- |
| 84 | 5.7 | **Discovery Manager** | start no earlier than 2014-06-04 |  |  |
| 85 | 5.7.1 | Implement SHMP V3 access |  | David Chan | 16h |
| 86 | 5.8 | Report Service | start no earlier than 2014-06-02 |  |  |
| 87 | 5.9 | **User Interface** | start no earlier than 2014-06-02 |  |  |
| 88 | 5.9.1 | Device Discovery Information Screen |  | Joel Huang | 16h |
| 89 | 6 | **Creating Selections** |  |  |  |
| 90 | 6.1 | Data Service | start no earlier than 2014-06-02 |  |  |
| 91 | 6.2 | **Data Storage Functions** | start no earlier than 2014-06-02 |  |  |
| 92 | 6.2.1 | INT-241 Simple Design Filter |  | David Taylor | 16h |
| 93 | 6.2.2 | Filter Design |  | David Taylor | 16h |
| 94 | 6.2.3 | Filter, Classes, Tables |  | David Taylor | 8h |
| 95 | 6.2.4 | Filter add, delete, modify |  | David Taylor | 8h |
| 96 | 6.2.5 | Filter, apply to queries, service elements |  | David Taylor | 24h |
| 97 | 6.3 | Deployment | start no earlier than 2014-06-02 |  |  |
| 98 | 6.4 | Discovery Service | start no earlier than 2014-06-02 |  |  |
| 99 | 6.5 | Domain Knowledge | start no earlier than 2014-06-02 |  |  |
| 100 | 6.6 | Inventory Manager | start no earlier than 2014-06-02 |  |  |
| 101 | 6.7 | Report Service | start no earlier than 2014-06-02 |  |  |
| 102 | 6.8 | **User Interface** | start no earlier than 2014-06-02 |  |  |
| 103 | 6.8.1 | Map Filters |  | Joel Huang | 24h |
| 104 | 6.8.2 | Topology Element Filtered View |  | Joel Huang | 24h |
| 105 | 6.8.3 | Filter Selection Panel |  | Joel Huang | 24h |
| 106 | 6.8.4 | Add location information in the Discovery process |  | Joel Huang | 16h |
| 107 | 6.9 | INT-241 Filter API |  | David Taylor | 16h |

Notes:
- 89: Times New Roman / 0 / left / left-to-right / 36 / We want users to be able to create, modify and delete selections (selections contain: filters, views and layers – see documentation). We want them be able to list selections and to cause their exectuion with results on the screen, in reports or other export functions - accomplished by the view portion of the selection. That also controls whether the information is graphically displayed or in table form. / Times New Roman / 0 / left / left-to-right / 36 / In first release all filters and views are per[user] group.

| ID | WBS | Task | Constraint | Resources | Work |
| --- | --- | --- | --- | --- | --- |
| 108 | 7 | **Viewing network and Service element details on the UI** |  |  |  |
| 109 | 7.1 | Data Service | start no earlier than 2014-06-02 |  |  |
| 110 | 7.2 | Data Storage Functions | start no earlier than 2014-06-02 |  |  |
| 111 | 7.3 | Deployment | start no earlier than 2014-06-02 |  |  |
| 112 | 7.4 | Discovery Service | start no earlier than 2014-06-02 |  |  |
| 113 | 7.5 | Domain Knowledge | start no earlier than 2014-06-02 |  |  |
| 114 | 7.6 | Inventory Manager | start no earlier than 2014-06-02 |  |  |
| 115 | 7.7 | Report Service | start no earlier than 2014-06-02 |  |  |
| 116 | 7.8 | **Discovery Manager** | start no earlier than 2014-06-04 |  |  |
| 117 | 7.8.1 | Layer 3 Discovery |  | David Chan | 16h |
| 118 | 7.8.2 | Discovery of location information and parsing SysLocation |  | David Chan | 16h |
| 119 | 7.9 | **User Interface** | start no earlier than 2014-06-02 |  |  |
| 120 | 7.9.1 | Display topology hierarchy |  | Joel Huang | 40h |
| 121 | 7.9.2 | Map Views, Providers, Locations, Service |  | Joel Huang | 24h |
| 122 | 7.9.3 | Design how information about icon locations for different backgrounds/perspectives is saved/used. |  | Joel Huang | 3h |
| 123 | 7.9.4 | Service Element Filtered View |  | Joel Huang | 24h |
| 124 | 7.9.5 | Show Topology Elements in Database with Single/Multiple Level Zoom |  | Joel Huang | 24h |
| 125 | 7.9.6 | Icon Work |  | Joel Huang | 24h |
| 126 | 7.10 | Learn how to get the precise physical location of a device using SNMP at Harvard |  | Jon Saperia | 24h |
| 127 | 8 | **Showing Link Information on Graphic Map** |  |  |  |
| 128 | 8.1 | Data Service | start no earlier than 2014-06-02 |  |  |
| 129 | 8.2 | Data Storage Functions | start no earlier than 2014-06-02 |  |  |
| 130 | 8.3 | Deployment | start no earlier than 2014-06-02 |  |  |
| 131 | 8.4 | Discovery Service | start no earlier than 2014-06-02 |  |  |
| 132 | 8.5 | Domain Knowledge | start no earlier than 2014-06-02 |  |  |
| 133 | 8.6 | Inventory Manager | start no earlier than 2014-06-02 |  |  |
| 134 | 8.7 | Report Service | start no earlier than 2014-06-02 |  |  |

Notes:
- 108: Times New Roman / 0 / left / left-to-right / 36 / Users can see details of Service Elements that have been selected in Filters as well as in reports. For example, expanding out the network interfaces in a router. They will also be able to list all devices on the screen and individually select service elements for expansion. / Times New Roman / 0 / left / left-to-right / 36 / Part of the information that a user can select is the discovery status of a ServiceElement / Times New Roman / 0 / left / left-to-right / 36 / This same function works for network details and navigating up/down the topology layers.
- 127: Times New Roman / 0 / left / left-to-right / 36 / A user has been running discovery for a while and would like to see the topology information. They can create a view that limits by location (or any other selection factor that is in the system) what they want to see. Imagine a campus network with core and distribution routers. The user would like to see just the network components and the interconnecting links. Just as a user can select a Device to drill down into (see the contained service elements) they can also drill down on a link to see, if there are vlans on the link or other InterDeviceLinks like CDP or VRRP.

| ID | WBS | Task | Constraint | Resources | Work |
| --- | --- | --- | --- | --- | --- |
| 135 | 8.8 | **User Interface** | start no earlier than 2014-06-02 |  |  |
| 136 | 8.8.1 | Show Topology Elements and Adjacencies in Database |  | Joel Huang | 32h |
| 137 | 9 | **Defining an Systems Inventory Report** |  |  |  |
| 138 | 9.1 | associate the basic service element type designed by loren |  | David Chan | 16h |
| 139 | 9.2 | Data Service | start no earlier than 2014-06-02 |  |  |
| 140 | 9.3 | Data Storage Functions | start no earlier than 2014-06-02 |  |  |
| 141 | 9.4 | Deployment | start no earlier than 2014-06-02 |  |  |
| 142 | 9.5 | Discovery Service | start no earlier than 2014-06-02 |  |  |
| 143 | 9.6 | Domain Knowledge | start no earlier than 2014-06-02 |  |  |
| 144 | 9.7 | **Inventory Manager** | start no earlier than 2014-06-02 |  |  |
| 145 | 9.7.1 | Inventory Manager design |  | David Taylor | 32h |
| 146 | 9.8 | **Report Service** | start no earlier than 2014-06-02 |  |  |
| 147 | 9.8.1 | Report JSON output of service element |  | David Taylor | 16h |
| 148 | 9.8.2 | Report Mgr design |  | David Taylor | 32h |
| 149 | 9.9 | User Interface | start no earlier than 2014-06-02 |  |  |
| 150 | 9.10 | **Discovery Manager** | start no earlier than 2014-06-04 |  |  |
| 151 | 9.10.1 | implement the differences matrix for add and delete for sub service element |  | David Chan | 16h |
| 152 | 9.10.2 | Element on DB the output of the matrix is using for inventory |  | David Chan | 8h |
| 153 | 9.10.3 | define the differences matrix between a discovered service element against a same service |  | David Chan | 16h |
| 154 | 9.10.4 | implement the differences matrix for attribute changing during discovery |  | David Chan | 8h |
| 155 | 9.11 | Send discovery complete and errors to UI |  | Jon Saperia | 32h |
| 156 | 10 | **Maintain Users, groups, and access policies and Contact information** |  |  |  |
| 157 | 10.1 | **Data Service** | start no earlier than 2014-06-02 |  |  |
| 158 | 10.1.1 | Add specific location information format to system |  | David Taylor | 16h |

Notes:
- 137: Times New Roman / 0 / left / left-to-right / 36 / The user would like a periodic report (a single report instance is also possible) that lists the entire 'inventory' in the system as of a specified date. They will be able to select the fields they would like included for each Service Element, Types of Service Elements, including listing them in a way that includes child Service Elements like disks etc and interfaces. This will also show the parent chiled relationship(s). / Times New Roman / 0 / left / left-to-right / 36 / For now, this report will also be exportable in JSON format.
- 156: Times New Roman / 0 / left / left-to-right / 36 / Allows operators to create new users, change their roles and reset password or disable/delete user. For those users that are externally authenticated such as with CAS, there will be no password. / Times New Roman / 0 / left / left-to-right / 36 / Classes included in this work are Organization, AuthNInfo, Contact, User, Role, Access Policy and CalendarPolicy. / Times New Roman / 0 / left / left-to-right / 36 / Also required is the UserContactAndRoleManager.

| ID | WBS | Task | Constraint | Resources | Work |
| --- | --- | --- | --- | --- | --- |
| 159 | 10.2 | **Data Storage Functions** | start no earlier than 2014-06-02 |  |  |
| 160 | 10.2.1 | System control, user, role, add, delete, modify |  | David Taylor | 8h |
| 161 | 10.2.2 | System Control, Role, add, delete, modify |  | David Taylor | 8h |
| 162 | 10.2.3 | System Controls, Vendor discovery template, add, delete, modify |  | David Taylor | 16h |
| 163 | 10.3 | Deployment | start no earlier than 2014-06-02 |  |  |
| 164 | 10.4 | Discovery Service | start no earlier than 2014-06-02 |  |  |
| 165 | 10.5 | Domain Knowledge | start no earlier than 2014-06-02 |  |  |
| 166 | 10.6 | Inventory Manager | start no earlier than 2014-06-02 |  |  |
| 167 | 10.7 | Report Service | start no earlier than 2014-06-02 |  |  |
| 168 | 10.8 | **User Interface** | start no earlier than 2014-06-02 |  |  |
| 169 | 10.8.1 | User Group, Roles |  | Joel Huang | 32h |
| 170 | 11 | **Show Discovery Status and Events** |  |  |  |
| 171 | 11.1 | **Data Service** | start no earlier than 2014-06-02 |  |  |
| 172 | 11.1.1 | Add JMS topic for updates to GUI |  | David Taylor | 24h |
| 173 | 11.1.2 | Add Message receiver to FE server for update messages |  | David Taylor | 16h |
| 174 | 11.1.3 | Add Message sender (for update messages) |  | David Taylor | 24h |
| 175 | 11.1.4 | Send update message to GUI (from FE server) |  | David Taylor | 24h |
| 176 | 11.1.5 | JMS, Message manager - register for messages |  | David Taylor | 24h |
| 177 | 11.1.6 | JMS , Config wildfly |  | David Taylor | 16h |
| 178 | 11.1.7 | JMS, update messages |  | David Taylor | 24h |
| 179 | 11.1.8 | JMS event message |  | David Taylor | 16h |
| 180 | 11.1.9 | JMS message sender |  | David Taylor | 24h |
| 181 | 11.1.10 | JMS message receiver. |  | David Taylor | 24h |
| 182 | 11.2 | **Data Storage Functions** | start no earlier than 2014-06-02 |  |  |
| 183 | 11.2.1 | Filter, apply to events |  | David Taylor | 24h |
| 184 | 11.3 | Deployment | start no earlier than 2014-06-02 |  |  |

Notes:
- 170: Times New Roman / 0 / left / left-to-right / 36 / A user has started a discovery (or it has been kicked off by a calendar). They want to see the status of the discovery and any possible errors that come up during the discovery process. This information should be presented via the common alarm and event manager window.

| ID | WBS | Task | Constraint | Resources | Work |
| --- | --- | --- | --- | --- | --- |
| 185 | 11.4 | **Discovery Service** | start no earlier than 2014-06-02 |  |  |
| 186 | 11.4.1 | Log and create audit message for Discovery complete and errors. |  | David Taylor | 8h |
| 187 | 11.5 | Domain Knowledge | start no earlier than 2014-06-02 |  |  |
| 188 | 11.6 | Inventory Manager | start no earlier than 2014-06-02 |  |  |
| 189 | 11.7 | Report Service | start no earlier than 2014-06-02 |  |  |
| 190 | 11.8 | **User Interface** | start no earlier than 2014-06-02 |  |  |
| 191 | 11.8.1 | UI Show status of discoveries |  | Joel Huang | 8h |
| 192 | 11.8.2 | Events |  | Joel Huang | 40h |
| 193 | 11.9 | Integration of State information into the model (and later system) |  | Jon Saperia | 8h |
| 194 | 12 | **Creating and managing topology and service element discovery policies** |  |  |  |
| 195 | 12.1 | Update complete discovery document |  | Jon Saperia | 200h |
| 196 | 12.2 | Data Service | start no earlier than 2014-06-02 |  |  |
| 197 | 12.3 | **Data Storage Functions** | start no earlier than 2014-06-02 |  |  |
| 198 | 12.3.1 | INT-241 Device Details of Discovery API, Last Times discovered, change found, next planned discovery |  | David Taylor | 8h |
| 199 | 12.4 | Deployment | start no earlier than 2014-06-02 |  |  |
| 200 | 12.5 | Discovery Service | start no earlier than 2014-06-02 |  |  |
| 201 | 12.6 | Domain Knowledge | start no earlier than 2014-06-02 |  |  |
| 202 | 12.7 | Inventory Manager | start no earlier than 2014-06-02 |  |  |
| 203 | 12.8 | Report Service | start no earlier than 2014-06-02 |  |  |
| 204 | 12.9 | User Interface | start no earlier than 2014-06-02 |  |  |
| 205 | 13 | **Defining a Change Report** |  |  |  |
| 206 | 13.1 | Data Service | start no earlier than 2014-06-02 |  |  |
| 207 | 13.2 | Data Storage Functions | start no earlier than 2014-06-02 |  |  |
| 208 | 13.3 | Deployment | start no earlier than 2014-06-02 |  |  |
| 209 | 13.4 | Discovery Service | start no earlier than 2014-06-02 |  |  |
| 210 | 13.5 | Domain Knowledge | start no earlier than 2014-06-02 |  |  |
| 211 | 13.6 | Inventory Manager | start no earlier than 2014-06-02 |  |  |
| 212 | 13.7 | Report Service | start no earlier than 2014-06-02 |  |  |

Notes:
- 194: Times New Roman / 0 / left / left-to-right / 36 / A user has set up discovery and it is running periodically. They have not yet set up any policies about what to do when new systems are discovered, changed, or missing. They wish to set up policies that tell the system what to do in all these cases as well as define some rules about when a system is deemed changed, missing or new. / Times New Roman / 0 / left / left-to-right / 36 / If needed we can delay the implemenation of the ImsSchedulingManager and Calendar and CalendarPolicy in this release.
- 205: Times New Roman / 0 / left / left-to-right / 36 / The general case is that a user would like periodic reports of information in the system that may change over time. In this case, they are interested in getting a report every 24 hours of the Service Elements that have changed since the last report was run (it may not always be the case that report interval is the same as the time interval to report on). The report rules are defined by the Policy and Inventory Handling parameters in a selected policy. / Times New Roman / 0 / left / left-to-right / 36 / The InventoryManager must be implemented for this story.

| ID | WBS | Task | Constraint | Resources | Work |
| --- | --- | --- | --- | --- | --- |
| 213 | 13.8 | **User Interface** | start no earlier than 2014-06-02 |  |  |
| 214 | 13.8.1 | Inventory Report Control and Display |  | Joel Huang | 40h |
| 215 | 14 | **Viewing Reports and ad hoc export of data** |  |  |  |
| 216 | 14.1 | Data Service | start no earlier than 2014-06-02 |  |  |
| 217 | 14.2 | Data Storage Functions | start no earlier than 2014-06-02 |  |  |
| 218 | 14.3 | Deployment | start no earlier than 2014-06-02 |  |  |
| 219 | 14.4 | **Infrastructure** | start no earlier than 2014-06-04 |  |  |
| 220 | 14.4.1 | Nagios Integration |  | Eric Remington | 24h |
| 221 | 14.4.2 | Create Nagios Installation in VPC | start no earlier than 2014-06-06 | Eric Remington | 200h |
| 222 | 14.4.3 | Get information from Tim Hartman about processing JSON file | start no earlier than 2014-06-06 | Eric Remington | 200h |
| 223 | 14.4.4 | Read Net MRI file and Parse | start no earlier than 2014-06-06 | Eric Remington | 200h |
| 224 | 14.5 | Discovery Service | start no earlier than 2014-06-02 |  |  |
| 225 | 14.6 | Domain Knowledge | start no earlier than 2014-06-02 |  |  |
| 226 | 14.7 | Inventory Manager | start no earlier than 2014-06-02 |  |  |
| 227 | 14.8 | Report Service | start no earlier than 2014-06-02 |  |  |
| 228 | 14.9 | User Interface | start no earlier than 2014-06-02 |  |  |
| 229 | 15 | **Deploy Skeleton System** |  |  |  |
| 230 | 15.1 | **Data Service** | start no earlier than 2014-06-02 |  |  |
| 231 | 15.1.1 | INT-241 Need system requirements description of configurable items Install/ Config/RMe |  | David Taylor | 8h |
| 232 | 15.1.2 | INT-241 Document verify that “invalid, self signal” certs may be used in test instances |  | David Taylor | 8h |
| 233 | 15.1.3 | work with loren and dave chan to bring together technologies/ and discovery and topology |  | David Taylor | 16h |
| 234 | 15.2 | **Data Storage Functions** | start no earlier than 2014-06-02 |  |  |
| 235 | 15.2.1 | YAML, Read in, technology, capability, SET |  | David Taylor | 16h |
| 236 | 15.3 | Deployment | start no earlier than 2014-06-02 |  |  |
| 237 | 15.4 | Discovery Service | start no earlier than 2014-06-02 |  |  |
| 238 | 15.5 | Domain Knowledge | start no earlier than 2014-06-02 |  |  |
| 239 | 15.6 | Inventory Manager | start no earlier than 2014-06-02 |  |  |
| 240 | 15.7 | Report Service | start no earlier than 2014-06-02 |  |  |

Notes:
- 215: Times New Roman / 0 / left / left-to-right / 36 / The user will be able to select which report (s) to view what to print, export and send in mail. / Times New Roman / 0 / left / left-to-right / 36 / Any report should be able to be filtered by an existing filter.
- 229: Times New Roman / 0 / left / left-to-right / 36 / Basic system up and running in the data center

| ID | WBS | Task | Type | Constraint | Resources | Work |
| --- | --- | --- | --- | --- | --- | --- |
| 241 | 15.8 | **Infrastructure** |  | start no earlier than 2014-06-04 |  |  |
| 242 | 15.8.1 | Distributed Install on multiple servers |  |  | Eric Remington | 32h |
| 243 | 15.9 | User Interface |  | start no earlier than 2014-06-02 |  |  |
| 244 | 15.10 | Create class, table and queries to store Distributed manager/services configuration |  |  | David Taylor | 8h |
| 245 | 16 | **A full set of deployment and configuration instructions** |  |  |  |  |
| 246 | 16.1 | Data Service |  | start no earlier than 2014-06-02 |  |  |
| 247 | 16.2 | Data Storage Functions |  | start no earlier than 2014-06-02 |  |  |
| 248 | 16.3 | Deployment |  | start no earlier than 2014-06-02 |  |  |
| 249 | 16.4 | **Infrastructure** |  | start no earlier than 2014-06-04 |  |  |
| 250 | 16.4.1 | Security recommendations for integer deployment |  |  | Jon Saperia | 16h |
| 251 | 16.5 | Discovery Service |  | start no earlier than 2014-06-02 |  |  |
| 252 | 16.6 | Domain Knowledge |  | start no earlier than 2014-06-02 |  |  |
| 253 | 16.7 | Inventory Manager |  | start no earlier than 2014-06-02 |  |  |
| 254 | 16.8 | Report Service |  | start no earlier than 2014-06-02 |  |  |
| 255 | 16.9 | User Interface |  | start no earlier than 2014-06-02 |  |  |
| 256 | 17 | **New System Controls** |  | start no earlier than 2014-05-22 |  |  |
| 257 | 17.1 | Data Service |  | start no earlier than 2014-06-02 |  |  |
| 258 | 17.2 | Data Storage Functions |  | start no earlier than 2014-06-02 |  |  |
| 259 | 17.3 | Deployment |  | start no earlier than 2014-06-02 |  |  |
| 260 | 17.4 | Discovery Service |  | start no earlier than 2014-06-02 |  |  |
| 261 | 17.5 | Domain Knowledge |  | start no earlier than 2014-06-02 |  |  |
| 262 | 17.6 | Inventory Manager |  | start no earlier than 2014-06-02 |  |  |
| 263 | 17.7 | Report Service |  | start no earlier than 2014-06-02 |  |  |
| 264 | 17.8 | **User Interface** |  | start no earlier than 2014-06-02 |  |  |
| 265 | 17.8.1 | Advanced System Control |  |  | Joel Huang | 40h |
| 266 | 18 | User installable instance of Integer |  |  | Jon Saperia | 8h |
| 267 | 19 | Write installation/verification software that conforms to security recommendations |  |  | Eric Remington | 8h |
| 268 | 20 | Identify and document correct system security configuration for the Integer OD |  |  | Eric Remington | 8h |
| 269 | 21 | User Access via CAS and LDAP - |  |  | Eric Remington | 8h |
| 270 | 22 | Sprint 6 | milestone | start no earlier than 2014-06-04 |  |  |
| 271 | 23 | Sprint 7 | milestone | start no earlier than 2014-06-18 |  |  |
| 272 | 24 | Sprint 8 | milestone | start no earlier than 2014-07-02 |  |  |
| 273 | 25 | Sprint 9 | milestone | start no earlier than 2014-07-18 |  |  |
| 274 | 26 | Sprint 10 | milestone | start no earlier than 2014-08-04 |  |  |
| 275 | 27 | INT-241 Save Path |  |  | David Taylor | 8h |
| 276 | 28 | Basic Inter device link creation including physical media association |  |  | Unassigned | 8h |
| 277 | 29 | Parse sys location - Needs to be a plug in |  |  | David Taylor | 8h |
| 278 | 30 | Collect & consolidate SNMP credentials for Harvard’s installation |  |  | David Taylor | 16h |

Notes:
- 245: Arial / 14 / left / left-to-right / 36 / We need a full set of deployment and configuration instructions for Integer.
- 256: 12 / left / left-to-right / 36 / After the system has been set up and initial information entered, the systems operator will want to be able to control various aspects of the system behavior. These include, distributed component control, start/stop discovery and reporting. This is a basic set for the first release.
- 266: Arial / 14 / left / left-to-right / 36 / User installable instance of Integer
- 267: Arial / 14 / left / left-to-right / 36 / Based on the system security requirements, write installation software that checks for conformance to these requirements and informs user of variation with actions to take based on the recommendations.
- 268: Arial / 14 / left / left-to-right / 36 / We want to identify what the correct security stance should be for an Integer installation. That is, what ports should be open, requirements for keys. This includes inter and intra system communication.
- 269: Arial / 14 / left / left-to-right / 36 / User is able to log into the Integer system using both CAS for authentication and LDAP as an attribute service. / Arial / 14 / left / left-to-right / 36 / A user sits at their web browser and types in the the home page URL for Integer. The request is redirected by the server to our CAS server for authentication, and optionally the LDAP repository is queried for attributes like first and last name.
