Schedule from OmniPlan.
Project start 2014-06-09

## Resources

| Resource | Group |
| --- | --- |
| Mark Bombalicki | staff |
| David Taylor | staff |
| Jon Saperia | staff |
| Eric Remington | staff |
| Joel Huang | staff |
| David Chan | staff |
| Unassigned | staff |

## Schedule

| ID | WBS | Task | Predecessors | Complete | Constraint | Resources | Work | Actual work |
| --- | --- | --- | --- | --- | --- | --- | --- | --- |
| 1 | 1 | Integer First Release |  |  |  | Jon Saperia | 8h |  |
| 2 | 2 | **User Logs into System directly.** |  |  |  |  |  |  |
| 3 | 2.1 | **Data Service** |  |  | start no earlier than 2014-06-04 |  |  |  |
| 4 | 2.1.1 | Allow User Log Out |  |  | start no earlier than 2014-06-04 | David Taylor | 8h |  |
| 5 | 2.2 | **User Interface** |  |  | start no earlier than 2014-06-04 |  |  |  |
| 6 | 2.2.1 | Add User Log Out |  |  | start no earlier than 2014-06-04 | Joel Huang | 16h |  |
| 7 | 3 | **Simple Service Element Discovery on a single subnet** |  |  |  |  |  |  |
| 8 | 3.1 | **Discovery Manager** |  |  | start no earlier than 2014-06-03 |  |  |  |
| 9 | 3.1.1 | Discovery of a device using hierarchical discovery |  |  |  | David Chan | 16h |  |
| 10 | 3.1.2 | Execution Stop Command During Discovery | 9 |  | start no earlier than 2014-06-03 | David Chan | 16h |  |
| 11 | 3.1.3 | Identify which objects in the Entity MIB and HR MIB and Interfaces MIB Modules to MAP | 10 |  | start no earlier than 2014-06-06 | David Chan | 4h |  |
| 12 | 3.1.4 | Generate an Unreachable Message During Subnet Discovery for an Existing Service Element | 11 |  | start no earlier than 2014-06-04 | David Chan | 16h |  |
| 13 | 3.1.5 | Complete Hierarchal containment discovery | 12 |  |  | David Chan | 8h |  |
| 14 | 3.1.6 | Implement MiB table polling and derterminate for service element type | 13 |  |  | David Chan | 8h |  |
| 15 | 3.1.7 | Implement mac to Ip address mapping | 14 |  | start no earlier than 2014-06-04 | David Chan | 16h |  |
| 16 | 3.1.8 | associate the basic service element type designed by loren | 15 |  |  | David Chan | 16h |  |
| 17 | 3.1.9 | Generate instance oid based mapping | 16 |  | start no earlier than 2014-06-04 | David Chan | 16h |  |
| 18 | 3.1.10 | Discovery unique identifier for each service element which includes the top level service element and the sub level service element | 17 | 100% |  | David Chan | 8h | 8h |
| 19 | 3.1.11 | Generate instance OID based on different mapping between MiB tables | 18 |  |  | David Chan | 8h |  |
| 20 | 3.1.12 | Identify Service Element (Routing Load Balance) | 19 |  |  | David Chan | 16h |  |
| 21 | 3.2 | **Data Service** |  |  | start no earlier than 2014-06-02 |  |  |  |
| 22 | 3.2.1 | Map IPv4 address to Interface as example of generic way to get mappings |  |  | start no earlier than 2014-06-04 | David Taylor | 8h |  |
| 23 | 3.2.2 | Integrate CAS plug-in and software into our System | 22 |  |  | David Taylor | 16h |  |
| 24 | 3.2.3 | Integrate LDAP Attribute Service while using CAS | 23 |  |  | David Taylor | 16h |  |
| 25 | 3.3 | Data Storage Functions |  |  | start no earlier than 2014-06-02 |  |  |  |
| 26 | 3.4 | Deployment |  |  | start no earlier than 2014-06-02 |  |  |  |

Notes:
- 2: Times New Roman / 0 / left / left-to-right / 36 / In some cases, a few operators will have 'root' access to integer. These users will be permitted to log into the system without and external authentication system like CAS. / Times New Roman / 0 / left / left-to-right / 36 / Implementing this first also gives us a way to get started with the system. It requires some amount of implementation of users etc. This will only implement as much as is needed.
- 7: Times New Roman / 0 / left / left-to-right / 36 / The idea is to do our first function end to end. After the user logs in, they will be able to start a discovery on a single subnet and find all the devices there. This will also include full service element discovery. / Times New Roman / 0 / left / left-to-right / 36 / This requires the implemenation of the SnmpVendorDiscoveryTemplate, ServiceElementDiscoveryManager, ServiceElementDiscoveryPolicy, SnmpVendorContainmentSelector, SnmpServiceElementRelationship, SnmpContainment, SnmpServiceElementTypeDiscriminator and SnmpLevelOID objects. It will also require the basic implementation of the Topology since that is how discovery stars and the IpTopologySeed. / Times New Roman / 0 / left / left-to-right / 36 / In addition to the ServiceElement and ServiceElementType implemenations required, the ServiceElementAccessManager must also be implemented to configure access (community strings) for devices. / Times New Roman / 0 / left / left-to-right / 36 / This will also include implemenation of the ServiceElementProtocolInstanceIdentifier.
- 10: Arial / 14 / left / left-to-right / 36 / After receiving stop command, the discovery manager should not make any new requests to devices.

| ID | WBS | Task | Predecessors | Complete | Constraint | Resources | Work | Actual work |
| --- | --- | --- | --- | --- | --- | --- | --- | --- |
| 27 | 3.5 | **Infrastructure** |  |  | start no earlier than 2014-06-04 |  |  |  |
| 28 | 3.5.1 | Import base data into build process (e.g., MIB Modules, Capabilities, ServiceElementTypes, etc. |  |  |  | Eric Remington | 16h |  |
| 29 | 3.6 | **Discovery Service** |  |  | start no earlier than 2014-06-02 |  |  |  |
| 30 | 3.6.1 | Server - send discovery errors and completion information to UI via API |  |  |  | David Taylor | 8h |  |
| 31 | 3.6.2 | Discovery - Start stop multiple discoveries | 30 |  |  | David Taylor | 16h |  |
| 32 | 3.6.3 | Server - Discovery status propagation via API | 31 |  |  | David Taylor | 24h |  |
| 33 | 3.6.4 | Discovery - Realtime status information of all discoveries in process | 32 |  |  | David Taylor | 8h |  |
| 34 | 3.6.5 | Save discovery status | 33 | 100% |  | David Taylor | 8h | 8h |
| 35 | 3.7 | **Domain Knowledge** |  |  | start no earlier than 2014-06-02 |  |  |  |
| 36 | 3.7.1 | Diagram & describe topology discovery |  |  |  | Jon Saperia | 16h |  |
| 37 | 3.7.2 | Load domain knowledge for CDP, IpRouteTable, VLANs |  |  | start no earlier than 2014-06-06 | Jon Saperia | 8h |  |
| 38 | 3.8 | Inventory Manager |  |  | start no earlier than 2014-06-02 |  |  |  |
| 39 | 3.9 | Report Service |  |  | start no earlier than 2014-06-02 |  |  |  |
| 40 | 3.10 | **User Interface** |  |  | start no earlier than 2014-06-02 |  |  |  |
| 41 | 3.10.1 | UI - Show discovery errors and completion |  |  |  | Joel Huang | 8h |  |
| 42 | 4 | **Create a multi-subnet service element and topology discovery and run** |  |  |  |  |  |  |
| 43 | 4.1 | Data Service |  |  | start no earlier than 2014-06-02 |  |  |  |
| 44 | 4.2 | **Data Storage Functions** |  |  | start no earlier than 2014-06-02 |  |  |  |
| 45 | 4.2.1 | INT-241 Save interdevice link |  |  |  | David Taylor | 8h |  |
| 46 | 4.3 | **Discovery Manager** |  |  | start no earlier than 2014-06-04 |  |  |  |
| 47 | 4.3.1 | Associate path and network with inter device link (Basic) |  |  |  | David Chan | 8h |  |
| 48 | 4.3.2 | Define Topology Discovery Process/Algorithm | 47 |  | start no earlier than 2014-06-04 | David Chan | 24h |  |
| 49 | 4.3.3 | Study MiBs related to network layers | 48 |  |  | David Chan | 16h |  |
| 50 | 4.3.4 | Topology element creation | 49 |  |  | David Chan | 8h |  |
| 51 | 4.3.5 | Implement ip routing for layer 3 inter device link | 50 |  |  | David Chan | 24h |  |
| 52 | 4.3.6 | Vlan study and implementation |  |  |  | David Chan | 8h |  |
| 53 | 4.3.7 | Implement Layer 3 Topology Algorithm |  |  | start no earlier than 2014-06-04 | David Chan | 24h |  |
| 54 | 4.3.8 | Implement VLAN Algorithm | 51 |  | start no earlier than 2014-06-04 | David Chan | 24h |  |
| 55 | 4.3.9 | implement level 2 topology base on a spanning tree |  |  |  | David Chan | 8h |  |
| 56 | 4.4 | Deployment |  |  | start no earlier than 2014-06-02 |  |  |  |
| 57 | 4.5 | Discovery Service |  |  | start no earlier than 2014-06-02 |  |  |  |
| 58 | 4.6 | API to GUI for Topology Information |  |  | start no earlier than 2014-06-04 | David Taylor | 24h |  |

Notes:
- 42: Times New Roman / 0 / left / left-to-right / 36 / The user wants an extended service element and layer 2/3 topology discovery of most of the environment that has many subnets. There are certain types of devices they want to include and others to exclude. / Times New Roman / 0 / left / left-to-right / 36 / If needed the TopologyElement and Path objects may be delayed from the previous simple service element on a single subnet story until this one. / Times New Roman / 0 / left / left-to-right / 36 / At this point the user is not controlling the configuration, it is set. Controlling the configuration of the discovery system is in the next story.

| ID | WBS | Task | Predecessors | Constraint | Resources | Work |
| --- | --- | --- | --- | --- | --- | --- |
| 59 | 4.7 | **Domain Knowledge** |  | start no earlier than 2014-06-02 |  |  |
| 60 | 4.7.1 | Make the first version of the technology tree |  |  | Jon Saperia | 8h |
| 61 | 4.7.2 | Load domain knowledge for CDP, IpRouteTable, VLANs |  | start no earlier than 2014-06-04 | Jon Saperia | 200h |
| 62 | 4.8 | Inventory Manager |  | start no earlier than 2014-06-02 |  |  |
| 63 | 4.9 | Report Service |  | start no earlier than 2014-06-02 |  |  |
| 64 | 4.10 | **User Interface** |  | start no earlier than 2014-06-02 |  |  |
| 65 | 4.10.1 | Basic Multiple Level Zoom |  |  | Joel Huang | 8h |
| 66 | 4.10.2 | Show Device Service Elements with Single/Multiple Level Zoom | 65 |  | Joel Huang | 8h |
| 67 | 4.10.3 | Display Topology Information Based on Selection | 66 | start no earlier than 2014-06-04 | Joel Huang | 16h |
| 68 | 4.10.4 | Display Topology Information Based on Selection - Phase 2 |  | start no earlier than 2014-06-06 | Joel Huang | 16h |
| 69 | 4.10.5 | Display Topology Information Based on Selection - Phase 3 |  | start no earlier than 2014-06-06 | Joel Huang | 16h |
| 70 | 4.11 | Finish Design topology / discovery |  |  | Jon Saperia | 200h |
| 71 | 5 | Sprint 7 - first half of Third story | 54, 67 | start no earlier than 2014-06-19 |  | 8h |
| 72 | 6 | Sproint 8 - Second hal |  | start no earlier than 2014-06-19 |  | 8h |
| 73 | 7 | Task 2 |  | start no earlier than 2014-06-19 |  | 8h |
| 74 | 8 | **Configure the discovery system** |  |  |  |  |
| 75 | 8.1 | **Data Service** |  | start no earlier than 2014-06-02 |  |  |
| 76 | 8.1.1 | Schedule Mgr |  |  | David Taylor | 24h |
| 77 | 8.2 | Data Storage Functions |  | start no earlier than 2014-06-02 |  |  |
| 78 | 8.3 | Deployment |  | start no earlier than 2014-06-02 |  |  |
| 79 | 8.4 | **Discovery Service** |  | start no earlier than 2014-06-02 |  |  |
| 80 | 8.4.1 | Discovery - errors/progress |  |  | David Taylor | 16h |
| 81 | 8.4.2 | Discovery List |  |  | David Taylor | 8h |
| 82 | 8.4.3 | Discovery Stop |  |  | David Taylor | 8h |
| 83 | 8.4.4 | Discovery , Schedule, Get next runtime |  |  | David Taylor | 16h |
| 84 | 8.4.5 | Discovery, Defaults |  |  | David Taylor | 8h |
| 85 | 8.5 | Domain Knowledge |  | start no earlier than 2014-06-02 |  |  |
| 86 | 8.6 | Inventory Manager |  | start no earlier than 2014-06-02 |  |  |

Notes:
- 74: Times New Roman / 0 / left / left-to-right / 36 / The system has just been deployed and the user would like to set up a general discovery by defining the subnets, hops from the seed subnets to search, default community strings for SNMP and their priority on a global and per subnet basis, and which Service Element Types to exclude from the discovery. / Times New Roman / 0 / left / left-to-right / 36 / They are also able to control the technologies used in the topology discovery and what to look for in the ServiceElementDiscovery phase.

| ID | WBS | Task | Constraint | Resources | Work |
| --- | --- | --- | --- | --- | --- |
| 87 | 8.7 | **Discovery Manager** | start no earlier than 2014-06-04 |  |  |
| 88 | 8.7.1 | Implement SHMP V3 access |  | David Chan | 16h |
| 89 | 8.8 | Report Service | start no earlier than 2014-06-02 |  |  |
| 90 | 8.9 | **User Interface** | start no earlier than 2014-06-02 |  |  |
| 91 | 8.9.1 | Device Discovery Information Screen |  | Joel Huang | 16h |
| 92 | 9 | **Creating Selections** |  |  |  |
| 93 | 9.1 | Data Service | start no earlier than 2014-06-02 |  |  |
| 94 | 9.2 | **Data Storage Functions** | start no earlier than 2014-06-02 |  |  |
| 95 | 9.2.1 | INT-241 Simple Design Filter |  | David Taylor | 16h |
| 96 | 9.2.2 | Filter Design |  | David Taylor | 16h |
| 97 | 9.2.3 | Filter, Classes, Tables |  | David Taylor | 8h |
| 98 | 9.2.4 | Filter add, delete, modify |  | David Taylor | 8h |
| 99 | 9.2.5 | Filter, apply to queries, service elements |  | David Taylor | 24h |
| 100 | 9.3 | Deployment | start no earlier than 2014-06-02 |  |  |
| 101 | 9.4 | Discovery Service | start no earlier than 2014-06-02 |  |  |
| 102 | 9.5 | Domain Knowledge | start no earlier than 2014-06-02 |  |  |
| 103 | 9.6 | Inventory Manager | start no earlier than 2014-06-02 |  |  |
| 104 | 9.7 | Report Service | start no earlier than 2014-06-02 |  |  |
| 105 | 9.8 | **User Interface** | start no earlier than 2014-06-02 |  |  |
| 106 | 9.8.1 | Map Filters |  | Joel Huang | 24h |
| 107 | 9.8.2 | Topology Element Filtered View |  | Joel Huang | 24h |
| 108 | 9.8.3 | Filter Selection Panel |  | Joel Huang | 24h |
| 109 | 9.8.4 | Add location information in the Discovery process |  | Joel Huang | 16h |
| 110 | 9.9 | INT-241 Filter API |  | David Taylor | 16h |

Notes:
- 92: Times New Roman / 0 / left / left-to-right / 36 / We want users to be able to create, modify and delete selections (selections contain: filters, views and layers – see documentation). We want them be able to list selections and to cause their exectuion with results on the screen, in reports or other export functions - accomplished by the view portion of the selection. That also controls whether the information is graphically displayed or in table form. / Times New Roman / 0 / left / left-to-right / 36 / In first release all filters and views are per[user] group.

| ID | WBS | Task | Constraint | Resources | Work |
| --- | --- | --- | --- | --- | --- |
| 111 | 10 | **Viewing network and Service element details on the UI** |  |  |  |
| 112 | 10.1 | Data Service | start no earlier than 2014-06-02 |  |  |
| 113 | 10.2 | Data Storage Functions | start no earlier than 2014-06-02 |  |  |
| 114 | 10.3 | Deployment | start no earlier than 2014-06-02 |  |  |
| 115 | 10.4 | Discovery Service | start no earlier than 2014-06-02 |  |  |
| 116 | 10.5 | Domain Knowledge | start no earlier than 2014-06-02 |  |  |
| 117 | 10.6 | Inventory Manager | start no earlier than 2014-06-02 |  |  |
| 118 | 10.7 | Report Service | start no earlier than 2014-06-02 |  |  |
| 119 | 10.8 | **Discovery Manager** | start no earlier than 2014-06-04 |  |  |
| 120 | 10.8.1 | Layer 3 Discovery |  | David Chan | 16h |
| 121 | 10.8.2 | Discovery of location information and parsing SysLocation |  | David Chan | 16h |
| 122 | 10.9 | **User Interface** | start no earlier than 2014-06-02 |  |  |
| 123 | 10.9.1 | Display topology hierarchy |  | Joel Huang | 40h |
| 124 | 10.9.2 | Map Views, Providers, Locations, Service |  | Joel Huang | 24h |
| 125 | 10.9.3 | Design how information about icon locations for different backgrounds/perspectives is saved/used. |  | Joel Huang | 3h |
| 126 | 10.9.4 | Service Element Filtered View |  | Joel Huang | 24h |
| 127 | 10.9.5 | Show Topology Elements in Database with Single/Multiple Level Zoom |  | Joel Huang | 24h |
| 128 | 10.9.6 | Icon Work |  | Joel Huang | 24h |
| 129 | 10.10 | Learn how to get the precise physical location of a device using SNMP at Harvard |  | Jon Saperia | 24h |
| 130 | 11 | **Showing Link Information on Graphic Map** |  |  |  |
| 131 | 11.1 | Data Service | start no earlier than 2014-06-02 |  |  |
| 132 | 11.2 | Data Storage Functions | start no earlier than 2014-06-02 |  |  |
| 133 | 11.3 | Deployment | start no earlier than 2014-06-02 |  |  |
| 134 | 11.4 | Discovery Service | start no earlier than 2014-06-02 |  |  |
| 135 | 11.5 | Domain Knowledge | start no earlier than 2014-06-02 |  |  |
| 136 | 11.6 | Inventory Manager | start no earlier than 2014-06-02 |  |  |
| 137 | 11.7 | Report Service | start no earlier than 2014-06-02 |  |  |

Notes:
- 111: Times New Roman / 0 / left / left-to-right / 36 / Users can see details of Service Elements that have been selected in Filters as well as in reports. For example, expanding out the network interfaces in a router. They will also be able to list all devices on the screen and individually select service elements for expansion. / Times New Roman / 0 / left / left-to-right / 36 / Part of the information that a user can select is the discovery status of a ServiceElement / Times New Roman / 0 / left / left-to-right / 36 / This same function works for network details and navigating up/down the topology layers.
- 130: Times New Roman / 0 / left / left-to-right / 36 / A user has been running discovery for a while and would like to see the topology information. They can create a view that limits by location (or any other selection factor that is in the system) what they want to see. Imagine a campus network with core and distribution routers. The user would like to see just the network components and the interconnecting links. Just as a user can select a Device to drill down into (see the contained service elements) they can also drill down on a link to see, if there are vlans on the link or other InterDeviceLinks like CDP or VRRP.

| ID | WBS | Task | Constraint | Resources | Work |
| --- | --- | --- | --- | --- | --- |
| 138 | 11.8 | **User Interface** | start no earlier than 2014-06-02 |  |  |
| 139 | 11.8.1 | Show Topology Elements and Adjacencies in Database |  | Joel Huang | 32h |
| 140 | 12 | **Defining an Systems Inventory Report** |  |  |  |
| 141 | 12.1 | associate the basic service element type designed by loren |  | David Chan | 16h |
| 142 | 12.2 | Data Service | start no earlier than 2014-06-02 |  |  |
| 143 | 12.3 | Data Storage Functions | start no earlier than 2014-06-02 |  |  |
| 144 | 12.4 | Deployment | start no earlier than 2014-06-02 |  |  |
| 145 | 12.5 | Discovery Service | start no earlier than 2014-06-02 |  |  |
| 146 | 12.6 | Domain Knowledge | start no earlier than 2014-06-02 |  |  |
| 147 | 12.7 | **Inventory Manager** | start no earlier than 2014-06-02 |  |  |
| 148 | 12.7.1 | Inventory Manager design |  | David Taylor | 32h |
| 149 | 12.8 | **Report Service** | start no earlier than 2014-06-02 |  |  |
| 150 | 12.8.1 | Report JSON output of service element |  | David Taylor | 16h |
| 151 | 12.8.2 | Report Mgr design |  | David Taylor | 32h |
| 152 | 12.9 | User Interface | start no earlier than 2014-06-02 |  |  |
| 153 | 12.10 | **Discovery Manager** | start no earlier than 2014-06-04 |  |  |
| 154 | 12.10.1 | implement the differences matrix for add and delete for sub service element |  | David Chan | 16h |
| 155 | 12.10.2 | Element on DB the output of the matrix is using for inventory |  | David Chan | 8h |
| 156 | 12.10.3 | define the differences matrix between a discovered service element against a same service |  | David Chan | 16h |
| 157 | 12.10.4 | implement the differences matrix for attribute changing during discovery |  | David Chan | 8h |
| 158 | 12.11 | Send discovery complete and errors to UI |  | Jon Saperia | 32h |
| 159 | 13 | **Maintain Users, groups, and access policies and Contact information** |  |  |  |
| 160 | 13.1 | **Data Service** | start no earlier than 2014-06-02 |  |  |
| 161 | 13.1.1 | Add specific location information format to system |  | David Taylor | 16h |

Notes:
- 140: Times New Roman / 0 / left / left-to-right / 36 / The user would like a periodic report (a single report instance is also possible) that lists the entire 'inventory' in the system as of a specified date. They will be able to select the fields they would like included for each Service Element, Types of Service Elements, including listing them in a way that includes child Service Elements like disks etc and interfaces. This will also show the parent chiled relationship(s). / Times New Roman / 0 / left / left-to-right / 36 / For now, this report will also be exportable in JSON format.
- 159: Times New Roman / 0 / left / left-to-right / 36 / Allows operators to create new users, change their roles and reset password or disable/delete user. For those users that are externally authenticated such as with CAS, there will be no password. / Times New Roman / 0 / left / left-to-right / 36 / Classes included in this work are Organization, AuthNInfo, Contact, User, Role, Access Policy and CalendarPolicy. / Times New Roman / 0 / left / left-to-right / 36 / Also required is the UserContactAndRoleManager.

| ID | WBS | Task | Constraint | Resources | Work |
| --- | --- | --- | --- | --- | --- |
| 162 | 13.2 | **Data Storage Functions** | start no earlier than 2014-06-02 |  |  |
| 163 | 13.2.1 | System control, user, role, add, delete, modify |  | David Taylor | 8h |
| 164 | 13.2.2 | System Control, Role, add, delete, modify |  | David Taylor | 8h |
| 165 | 13.2.3 | System Controls, Vendor discovery template, add, delete, modify |  | David Taylor | 16h |
| 166 | 13.3 | Deployment | start no earlier than 2014-06-02 |  |  |
| 167 | 13.4 | Discovery Service | start no earlier than 2014-06-02 |  |  |
| 168 | 13.5 | Domain Knowledge | start no earlier than 2014-06-02 |  |  |
| 169 | 13.6 | Inventory Manager | start no earlier than 2014-06-02 |  |  |
| 170 | 13.7 | Report Service | start no earlier than 2014-06-02 |  |  |
| 171 | 13.8 | **User Interface** | start no earlier than 2014-06-02 |  |  |
| 172 | 13.8.1 | User Group, Roles |  | Joel Huang | 32h |
| 173 | 14 | **Show Discovery Status and Events** |  |  |  |
| 174 | 14.1 | **Data Service** | start no earlier than 2014-06-02 |  |  |
| 175 | 14.1.1 | Add JMS topic for updates to GUI |  | David Taylor | 24h |
| 176 | 14.1.2 | Add Message receiver to FE server for update messages |  | David Taylor | 16h |
| 177 | 14.1.3 | Add Message sender (for update messages) |  | David Taylor | 24h |
| 178 | 14.1.4 | Send update message to GUI (from FE server) |  | David Taylor | 24h |
| 179 | 14.1.5 | JMS, Message manager - register for messages |  | David Taylor | 24h |
| 180 | 14.1.6 | JMS , Config wildfly |  | David Taylor | 16h |
| 181 | 14.1.7 | JMS, update messages |  | David Taylor | 24h |
| 182 | 14.1.8 | JMS event message |  | David Taylor | 16h |
| 183 | 14.1.9 | JMS message sender |  | David Taylor | 24h |
| 184 | 14.1.10 | JMS message receiver. |  | David Taylor | 24h |
| 185 | 14.2 | **Data Storage Functions** | start no earlier than 2014-06-02 |  |  |
| 186 | 14.2.1 | Filter, apply to events |  | David Taylor | 24h |
| 187 | 14.3 | Deployment | start no earlier than 2014-06-02 |  |  |

Notes:
- 173: Times New Roman / 0 / left / left-to-right / 36 / A user has started a discovery (or it has been kicked off by a calendar). They want to see the status of the discovery and any possible errors that come up during the discovery process. This information should be presented via the common alarm and event manager window.

| ID | WBS | Task | Constraint | Resources | Work |
| --- | --- | --- | --- | --- | --- |
| 188 | 14.4 | **Discovery Service** | start no earlier than 2014-06-02 |  |  |
| 189 | 14.4.1 | Log and create audit message for Discovery complete and errors. |  | David Taylor | 8h |
| 190 | 14.5 | Domain Knowledge | start no earlier than 2014-06-02 |  |  |
| 191 | 14.6 | Inventory Manager | start no earlier than 2014-06-02 |  |  |
| 192 | 14.7 | Report Service | start no earlier than 2014-06-02 |  |  |
| 193 | 14.8 | **User Interface** | start no earlier than 2014-06-02 |  |  |
| 194 | 14.8.1 | UI Show status of discoveries |  | Joel Huang | 8h |
| 195 | 14.8.2 | Events |  | Joel Huang | 40h |
| 196 | 14.9 | Integration of State information into the model (and later system) |  | Jon Saperia | 8h |
| 197 | 15 | **Creating and managing topology and service element discovery policies** |  |  |  |
| 198 | 15.1 | Update complete discovery document |  | Jon Saperia | 200h |
| 199 | 15.2 | Data Service | start no earlier than 2014-06-02 |  |  |
| 200 | 15.3 | **Data Storage Functions** | start no earlier than 2014-06-02 |  |  |
| 201 | 15.3.1 | INT-241 Device Details of Discovery API, Last Times discovered, change found, next planned discovery |  | David Taylor | 8h |
| 202 | 15.4 | Deployment | start no earlier than 2014-06-02 |  |  |
| 203 | 15.5 | Discovery Service | start no earlier than 2014-06-02 |  |  |
| 204 | 15.6 | Domain Knowledge | start no earlier than 2014-06-02 |  |  |
| 205 | 15.7 | Inventory Manager | start no earlier than 2014-06-02 |  |  |
| 206 | 15.8 | Report Service | start no earlier than 2014-06-02 |  |  |
| 207 | 15.9 | User Interface | start no earlier than 2014-06-02 |  |  |
| 208 | 16 | **Defining a Change Report** |  |  |  |
| 209 | 16.1 | Data Service | start no earlier than 2014-06-02 |  |  |
| 210 | 16.2 | Data Storage Functions | start no earlier than 2014-06-02 |  |  |
| 211 | 16.3 | Deployment | start no earlier than 2014-06-02 |  |  |
| 212 | 16.4 | Discovery Service | start no earlier than 2014-06-02 |  |  |
| 213 | 16.5 | Domain Knowledge | start no earlier than 2014-06-02 |  |  |
| 214 | 16.6 | Inventory Manager | start no earlier than 2014-06-02 |  |  |
| 215 | 16.7 | Report Service | start no earlier than 2014-06-02 |  |  |

Notes:
- 197: Times New Roman / 0 / left / left-to-right / 36 / A user has set up discovery and it is running periodically. They have not yet set up any policies about what to do when new systems are discovered, changed, or missing. They wish to set up policies that tell the system what to do in all these cases as well as define some rules about when a system is deemed changed, missing or new. / Times New Roman / 0 / left / left-to-right / 36 / If needed we can delay the implemenation of the ImsSchedulingManager and Calendar and CalendarPolicy in this release.
- 208: Times New Roman / 0 / left / left-to-right / 36 / The general case is that a user would like periodic reports of information in the system that may change over time. In this case, they are interested in getting a report every 24 hours of the Service Elements that have changed since the last report was run (it may not always be the case that report interval is the same as the time interval to report on). The report rules are defined by the Policy and Inventory Handling parameters in a selected policy. / Times New Roman / 0 / left / left-to-right / 36 / The InventoryManager must be implemented for this story.

| ID | WBS | Task | Constraint | Resources | Work |
| --- | --- | --- | --- | --- | --- |
| 216 | 16.8 | **User Interface** | start no earlier than 2014-06-02 |  |  |
| 217 | 16.8.1 | Inventory Report Control and Display |  | Joel Huang | 40h |
| 218 | 17 | **Viewing Reports and ad hoc export of data** |  |  |  |
| 219 | 17.1 | Data Service | start no earlier than 2014-06-02 |  |  |
| 220 | 17.2 | Data Storage Functions | start no earlier than 2014-06-02 |  |  |
| 221 | 17.3 | Deployment | start no earlier than 2014-06-02 |  |  |
| 222 | 17.4 | **Infrastructure** | start no earlier than 2014-06-04 |  |  |
| 223 | 17.4.1 | Nagios Integration |  | Eric Remington | 24h |
| 224 | 17.4.2 | Create Nagios Installation in VPC | start no earlier than 2014-06-06 | Eric Remington | 200h |
| 225 | 17.4.3 | Get information from Tim Hartman about processing JSON file | start no earlier than 2014-06-06 | Eric Remington | 200h |
| 226 | 17.4.4 | Read Net MRI file and Parse | start no earlier than 2014-06-06 | Eric Remington | 200h |
| 227 | 17.5 | Discovery Service | start no earlier than 2014-06-02 |  |  |
| 228 | 17.6 | Domain Knowledge | start no earlier than 2014-06-02 |  |  |
| 229 | 17.7 | Inventory Manager | start no earlier than 2014-06-02 |  |  |
| 230 | 17.8 | Report Service | start no earlier than 2014-06-02 |  |  |
| 231 | 17.9 | User Interface | start no earlier than 2014-06-02 |  |  |
| 232 | 18 | **Deploy Skeleton System** |  |  |  |
| 233 | 18.1 | **Data Service** | start no earlier than 2014-06-02 |  |  |
| 234 | 18.1.1 | INT-241 Need system requirements description of configurable items Install/ Config/RMe |  | David Taylor | 8h |
| 235 | 18.1.2 | INT-241 Document verify that “invalid, self signal” certs may be used in test instances |  | David Taylor | 8h |
| 236 | 18.1.3 | work with loren and dave chan to bring together technologies/ and discovery and topology |  | David Taylor | 16h |
| 237 | 18.2 | **Data Storage Functions** | start no earlier than 2014-06-02 |  |  |
| 238 | 18.2.1 | YAML, Read in, technology, capability, SET |  | David Taylor | 16h |
| 239 | 18.3 | Deployment | start no earlier than 2014-06-02 |  |  |
| 240 | 18.4 | Discovery Service | start no earlier than 2014-06-02 |  |  |
| 241 | 18.5 | Domain Knowledge | start no earlier than 2014-06-02 |  |  |
| 242 | 18.6 | Inventory Manager | start no earlier than 2014-06-02 |  |  |
| 243 | 18.7 | Report Service | start no earlier than 2014-06-02 |  |  |

Notes:
- 218: Times New Roman / 0 / left / left-to-right / 36 / The user will be able to select which report (s) to view what to print, export and send in mail. / Times New Roman / 0 / left / left-to-right / 36 / Any report should be able to be filtered by an existing filter.
- 232: Times New Roman / 0 / left / left-to-right / 36 / Basic system up and running in the data center

| ID | WBS | Task | Type | Constraint | Resources | Work |
| --- | --- | --- | --- | --- | --- | --- |
| 244 | 18.8 | **Infrastructure** |  | start no earlier than 2014-06-04 |  |  |
| 245 | 18.8.1 | Distributed Install on multiple servers |  |  | Eric Remington | 32h |
| 246 | 18.9 | User Interface |  | start no earlier than 2014-06-02 |  |  |
| 247 | 18.10 | Create class, table and queries to store Distributed manager/services configuration |  |  | David Taylor | 8h |
| 248 | 19 | **A full set of deployment and configuration instructions** |  |  |  |  |
| 249 | 19.1 | Data Service |  | start no earlier than 2014-06-02 |  |  |
| 250 | 19.2 | Data Storage Functions |  | start no earlier than 2014-06-02 |  |  |
| 251 | 19.3 | Deployment |  | start no earlier than 2014-06-02 |  |  |
| 252 | 19.4 | **Infrastructure** |  | start no earlier than 2014-06-04 |  |  |
| 253 | 19.4.1 | Security recommendations for integer deployment |  |  | Jon Saperia | 16h |
| 254 | 19.5 | Discovery Service |  | start no earlier than 2014-06-02 |  |  |
| 255 | 19.6 | Domain Knowledge |  | start no earlier than 2014-06-02 |  |  |
| 256 | 19.7 | Inventory Manager |  | start no earlier than 2014-06-02 |  |  |
| 257 | 19.8 | Report Service |  | start no earlier than 2014-06-02 |  |  |
| 258 | 19.9 | User Interface |  | start no earlier than 2014-06-02 |  |  |
| 259 | 20 | **New System Controls** |  | start no earlier than 2014-05-22 |  |  |
| 260 | 20.1 | Data Service |  | start no earlier than 2014-06-02 |  |  |
| 261 | 20.2 | Data Storage Functions |  | start no earlier than 2014-06-02 |  |  |
| 262 | 20.3 | Deployment |  | start no earlier than 2014-06-02 |  |  |
| 263 | 20.4 | Discovery Service |  | start no earlier than 2014-06-02 |  |  |
| 264 | 20.5 | Domain Knowledge |  | start no earlier than 2014-06-02 |  |  |
| 265 | 20.6 | Inventory Manager |  | start no earlier than 2014-06-02 |  |  |
| 266 | 20.7 | Report Service |  | start no earlier than 2014-06-02 |  |  |
| 267 | 20.8 | **User Interface** |  | start no earlier than 2014-06-02 |  |  |
| 268 | 20.8.1 | Advanced System Control |  |  | Joel Huang | 40h |
| 269 | 21 | User installable instance of Integer |  |  | Jon Saperia | 8h |
| 270 | 22 | Write installation/verification software that conforms to security recommendations |  |  | Eric Remington | 8h |
| 271 | 23 | Identify and document correct system security configuration for the Integer OD |  |  | Eric Remington | 8h |
| 272 | 24 | User Access via CAS and LDAP - |  |  | Eric Remington | 8h |
| 273 | 25 | Sprint 6 | milestone | start no earlier than 2014-06-04 |  |  |
| 274 | 26 | Sprint 7 | milestone | start no earlier than 2014-06-18 |  |  |
| 275 | 27 | Sprint 8 | milestone | start no earlier than 2014-07-02 |  |  |
| 276 | 28 | Sprint 9 | milestone | start no earlier than 2014-07-18 |  |  |
| 277 | 29 | Sprint 10 | milestone | start no earlier than 2014-08-04 |  |  |
| 278 | 30 | INT-241 Save Path |  |  | David Taylor | 8h |
| 279 | 31 | Basic Inter device link creation including physical media association |  |  | Unassigned | 8h |
| 280 | 32 | Parse sys location - Needs to be a plug in |  |  | David Taylor | 8h |
| 281 | 33 | Collect & consolidate SNMP credentials for Harvard’s installation |  |  | David Taylor | 16h |

Notes:
- 248: Arial / 14 / left / left-to-right / 36 / We need a full set of deployment and configuration instructions for Integer.
- 259: 12 / left / left-to-right / 36 / After the system has been set up and initial information entered, the systems operator will want to be able to control various aspects of the system behavior. These include, distributed component control, start/stop discovery and reporting. This is a basic set for the first release.
- 269: Arial / 14 / left / left-to-right / 36 / User installable instance of Integer
- 270: Arial / 14 / left / left-to-right / 36 / Based on the system security requirements, write installation software that checks for conformance to these requirements and informs user of variation with actions to take based on the recommendations.
- 271: Arial / 14 / left / left-to-right / 36 / We want to identify what the correct security stance should be for an Integer installation. That is, what ports should be open, requirements for keys. This includes inter and intra system communication.
- 272: Arial / 14 / left / left-to-right / 36 / User is able to log into the Integer system using both CAS for authentication and LDAP as an attribute service. / Arial / 14 / left / left-to-right / 36 / A user sits at their web browser and types in the the home page URL for Integer. The request is redirected by the server to our CAS server for authentication, and optionally the LDAP repository is queried for attributes like first and last name.
