Schedule from OmniPlan.
Project start 2014-05-22

## Resources

| Resource | Group |
| --- | --- |
| Mark Bombalicki | staff |
| David Taylor | staff |
| Jon Saperia | staff |
| Joel Huang | staff |
| David Chan | staff |
| Unassigned | staff |

## Schedule

| ID | WBS | Task | Type | Predecessors | Complete | Constraint | Resources | Work | Actual work |
| --- | --- | --- | --- | --- | --- | --- | --- | --- | --- |
| 1 | 1 | Integer First Release |  |  |  |  | Jon Saperia | 8h |  |
| 2 | 2 | User Logs into System directly. |  |  |  | start no earlier than 2014-05-22 |  |  |  |
| 3 | 3 | Sprint 6 | milestone |  |  | start no earlier than 2014-06-23 |  |  |  |
| 4 | 4 | **Simple Service Element Discovery on a single subnet** |  |  |  |  |  |  |  |
| 5 | 4.1 | **Discovery Service** |  |  |  | start no earlier than 2014-05-21 |  |  |  |
| 6 | 4.1.1 | Save discovery status |  |  | 100% |  | David Taylor | 8h | 8h |
| 7 | 4.1.2 | Service Element Summary Information API |  | 6 | 100% | start no earlier than 2014-05-21 | David Taylor | 8h | 8h |
| 8 | 4.1.3 | Server - Create, delete, modify discovery policy including topology seed. |  | 7 | 100% |  | David Taylor | 8h | 8h |
| 9 | 4.1.4 | Server - Start stop discovier(ies) multiple at a time. |  | 8 | 100% |  | David Taylor | 8h | 8h |
| 10 | 4.1.5 | Update ServiceElementType with signature list. Add Signature |  | 9 | 100% | start no earlier than 2014-05-29 | David Taylor | 16h | 16h |
| 11 | 4.1.6 | Add Selection to YAML import. C |  |  | 100% | start no earlier than 2014-06-19 | David Taylor | 8h | 8h |
| 12 | 4.2 | **Data Storage Functions** |  |  |  | start no earlier than 2014-06-02 |  |  |  |
| 13 | 4.2.1 | Add Category to Filter |  | 10 | 100% |  | David Taylor | 4h | 4h |
| 14 | 4.3 | **Discovery Manager** |  |  |  | start no earlier than 2014-05-21 |  |  |  |
| 15 | 4.3.1 | Discovery of a device using hierarchical discovery |  |  | 100% | start no earlier than 2014-05-21 | David Chan | 16h | 16h |
| 16 | 4.3.2 | Execution Stop Command During Discovery |  | 15 | 100% | start no earlier than 2014-05-21 | David Chan | 16h | 16h |
| 17 | 4.3.3 | Identify which objects in the Entity MIB and HR MIB and Interfaces MIB Modules to MAP |  | 16 | 100% | start no earlier than 2014-05-21 | David Chan | 4h | 4h |
| 18 | 4.3.4 | Generate an Unreachable Message During Subnet Discovery for an Existing Service Element |  | 17 | 100% | start no earlier than 2014-05-21 | David Chan | 16h | 16h |
| 19 | 4.3.5 | Complete Hierarchal containment discovery |  | 18 | 100% | start no earlier than 2014-05-21 | David Chan | 8h | 8h |
| 20 | 4.3.6 | Implement MiB table polling and derterminate for service element type |  | 19 | 100% | start no earlier than 2014-05-21 | David Chan | 8h | 8h |
| 21 | 4.3.7 | Implement mac to Ip address mapping |  | 20 | 100% | start no earlier than 2014-05-21 | David Chan | 16h | 16h |
| 22 | 4.3.8 | Generate instance oid based mapping |  | 21 | 100% | start no earlier than 2014-05-21 | David Chan | 16h | 16h |
| 23 | 4.3.9 | Discovery unique identifier for each service element which includes the top level service element and the sub level service element |  | 22 | 100% | start no earlier than 2014-05-21 | David Chan | 8h | 8h |
| 24 | 4.3.10 | Generate instance OID based on different mapping between MiB tables |  | 23 | 100% | start no earlier than 2014-06-13 | David Chan | 8h | 8h |
| 25 | 4.3.11 | Create Interface service element yaml |  |  | 100% | start no earlier than 2014-06-16 | David Chan | 16h | 16h |
| 26 | 4.3.12 | Create Service Element Type yaml extension |  |  | 100% | start no earlier than 2014-06-16 | David Chan | 16h | 16h |
| 27 | 4.3.13 | Re-define cdp-interface yaml to match with Integer Design |  |  | 100% | start no earlier than 2014-06-16 | David Chan | 16h | 16h |
| 28 | 4.3.14 | Re-define entity yaml to match with Integer Design |  |  | 100% | start no earlier than 2014-06-16 | David Chan | 16h | 16h |
| 29 | 4.3.15 | Based on parent, sibling relation specified in MIB attribute to create service element |  |  | 100% | start no earlier than 2014-06-16 | David Chan | 16h | 16h |
| 30 | 4.3.16 | Based on mapping table to create service element |  |  | 100% | start no earlier than 2014-06-16 | David Chan | 16h | 16h |
| 31 | 4.3.17 | Phase1 Implement containment relation transaction from Interface SET to SET that associated with Topology. |  |  | 100% | start no earlier than 2014-06-17 | David Chan | 8h | 8h |
| 32 | 4.3.18 | Discover Service Element that contains Topology Element. |  |  | 100% | start no earlier than 2014-06-17 | David Chan | 8h | 8h |
| 33 | 4.3.19 | Create a containment transaction yaml file that is not linking with Vendor based on Entity MIB |  |  | 100% | start no earlier than 2014-06-17 | David Chan | 16h | 16h |
| 34 | 4.3.20 | Add more existing Snmp Containment association: sysVendor and category |  |  | 100% | start no earlier than 2014-06-18 | David Taylor | 8h | 8h |
| 35 | 4.3.21 | Define yaml for MIB containment transaction for Cisco |  |  | 100% | start no earlier than 2014-06-19 | David Taylor | 8h | 8h |
| 36 | 4.4 | User Interface |  |  |  | start no earlier than 2014-06-02 |  |  |  |
| 37 | 5 | Sprint 7 | milestone |  |  | start no earlier than 2014-07-15 |  |  |  |
| 38 | 6 | Sprint 8 | milestone |  |  | start no earlier than 2014-07-31 |  |  |  |
| 39 | 7 | Sprint 9 | milestone |  |  | start no earlier than 2014-08-14 |  |  |  |
| 40 | 8 | Sprint 10 | milestone |  |  | start no earlier than 2014-08-28 |  |  |  |

Notes:
- 2: Times New Roman / 0 / left / left-to-right / 36 / In some cases, a few operators will have 'root' access to integer. These users will be permitted to log into the system without and external authentication system like CAS. / Times New Roman / 0 / left / left-to-right / 36 / Implementing this first also gives us a way to get started with the system. It requires some amount of implementation of users etc. This will only implement as much as is needed.
- 4: Times New Roman / 0 / left / left-to-right / 36 / The idea is to do our first function end to end. After the user logs in, they will be able to start a discovery on a single subnet and find all the devices there. This will also include full service element discovery. / Times New Roman / 0 / left / left-to-right / 36 / This requires the implemenation of the SnmpVendorDiscoveryTemplate, ServiceElementDiscoveryManager, ServiceElementDiscoveryPolicy, SnmpVendorContainmentSelector, SnmpServiceElementRelationship, SnmpContainment, SnmpServiceElementTypeDiscriminator and SnmpLevelOID objects. It will also require the basic implementation of the Topology since that is how discovery stars and the IpTopologySeed. / Times New Roman / 0 / left / left-to-right / 36 / In addition to the ServiceElement and ServiceElementType implemenations required, the ServiceElementAccessManager must also be implemented to configure access (community strings) for devices. / Times New Roman / 0 / left / left-to-right / 36 / This will also include implemenation of the ServiceElementProtocolInstanceIdentifier.
- 16: Arial / 14 / left / left-to-right / 36 / After receiving stop command, the discovery manager should not make any new requests to devices.

| ID | WBS | Task | Type | Predecessors | Complete | Constraint | Resources | Work | Actual work |
| --- | --- | --- | --- | --- | --- | --- | --- | --- | --- |
| 41 | 9 | **Create a multi-subnet service element and topology discovery and run** |  |  |  | start no earlier than 2014-07-02 |  |  |  |
| 42 | 9.1 | **Data Storage Functions** |  |  |  |  |  |  |  |
| 43 | 9.1.1 | Design for UI for the Display of Selections |  |  | 100% |  | David Taylor | 4h | 4h |
| 44 | 9.1.2 | Define Graphic Topology Layout Algorithms |  |  | 100% |  | David Taylor | 8h | 8h |
| 45 | 9.1.3 | Finish Design Topology / Discovery |  |  | 100% |  | David Taylor | 4h | 4h |
| 46 | 9.1.4 | Get Vendor containment selector by vendor signature |  |  | 100% |  | David Taylor | 8h | 8h |
| 47 | 9.1.5 | Import YAML for category |  | 46 | 100% |  | David Taylor | 4h | 4h |
| 48 | 9.1.6 | Sprint 7 | milestone |  |  | start no earlier than 2014-07-16 |  |  |  |
| 49 | 9.1.7 | API to get service element type by signature |  | 47 |  |  | David Taylor | 8h |  |
| 50 | 9.1.8 | API to get Network objects |  | 49 |  |  | David Taylor | 4h |  |
| 51 | 9.1.9 | Save interdevice link |  | 50 | 100% |  | David Taylor | 8h | 8h |
| 52 | 9.1.10 | Add API to get PATH and InterDeviceLinks for discovery use |  | 51 |  |  | David Taylor | 4h |  |
| 53 | 9.1.11 | Save Path |  | 52 | 50% |  | David Taylor | 16h | 8h |
| 54 | 9.1.12 | API for UI to get technology tree |  | 53 |  |  | David Taylor | 16h |  |
| 55 | 9.1.13 | Filter, apply to queries, service elements |  | 54 | 100% |  | David Taylor | 8h | 8h |
| 56 | 9.1.14 | API to get InterDeviceLinks by selection (limited) |  | 55 |  |  | David Taylor | 8h |  |
| 57 | 9.1.15 | API to get Network objects by selection (limited) |  | 56 |  |  | David Taylor | 8h |  |
| 58 | 9.1.16 | API to get ServiceElements by Selection (limited) |  | 57 |  |  | David Taylor | 16h |  |
| 59 | 9.1.17 | API to get ToplogyElements for a service element |  | 58 |  |  | David Taylor | 4h |  |
| 60 | 9.1.18 | API to get InterDeviceLink objects |  | 59 |  |  | David Taylor | 4h |  |
| 61 | 9.1.19 | Add logic to not run multiple discoveries on a subnet |  | 60 |  |  | David Taylor | 8h |  |
| 62 | 9.1.20 | TopologyManager. Add processing of InterDeviceLinks |  | 61 |  |  | David Taylor | 8h |  |
| 63 | 9.1.21 | Call TopologyManager when InterDeviceLinks are crated, updated or deleted |  | 62 |  |  | David Taylor | 4h |  |
| 64 | 9.1.22 | API to save TopologyElement and InterDevice link |  | 63 |  |  | David Taylor | 4h |  |
| 65 | 9.1.23 | Sprint 8 | milestone |  |  | start no earlier than 2014-07-30 |  |  |  |
| 66 | 9.1.24 | API to get SEMO's for a capability |  | 64 |  |  | David Taylor | 4h |  |
| 67 | 9.1.25 | API to stop a discovery |  | 66 |  |  | David Taylor | 4h |  |
| 68 | 9.1.26 | API to show list of running discoveries |  | 67 |  |  | David Taylor | 4h |  |
| 69 | 9.1.27 | Create one shot calendar |  | 68 |  |  | David Taylor | 8h |  |
| 70 | 9.1.28 | Create reoccurring calendar |  | 69 |  |  | David Taylor | 8h |  |
| 71 | 9.1.29 | Add quartz to build |  | 70 |  |  | David Taylor | 4h |  |
| 72 | 9.1.30 | Calendar - get status of a task, Stop a task |  | 71 |  |  | David Taylor | 6h |  |
| 73 | 9.1.31 | Create Calendar service |  | 72 |  |  | David Taylor | 16h |  |
| 74 | 9.1.32 | Create CalendarTask base task. Create DiscoveryStartTask |  | 73 |  |  | David Taylor | 8h |  |
| 75 | 9.1.33 | Create Calendar and CalendarPolicy |  | 74 |  |  | David Taylor | 8h |  |
| 76 | 9.1.34 | Sprint 9 | milestone |  |  | start no earlier than 2014-08-12 |  |  |  |
| 77 | 9.1.35 | Calendar discoveryStartTask |  | 75 |  |  | David Taylor | 16h |  |
| 78 | 9.1.36 | Create TopologyManager |  | 77 |  |  | David Taylor | 16h |  |
| 79 | 9.1.37 | Server - send discovery errors and completion information to UI via API |  | 78 |  |  | David Taylor | 8h |  |
| 80 | 9.1.38 | Discovery - Start stop multiple discoveries |  | 79 |  |  | David Taylor | 16h |  |
| 81 | 9.1.39 | Sprint 10 | milestone |  |  | start no earlier than 2014-08-26 |  |  |  |
| 82 | 9.1.40 | Change DB to store category tree. |  |  |  | start no earlier than 2014-07-16 | David Taylor | 4h |  |
| 83 | 9.1.41 | Simple Design Filter |  |  |  | start no earlier than 2014-07-16 | David Taylor | 16h |  |

Notes:
- 41: Times New Roman / 0 / left / left-to-right / 36 / The user wants an extended service element and layer 2/3 topology discovery of most of the environment that has many subnets. There are certain types of devices they want to include and others to exclude. / Times New Roman / 0 / left / left-to-right / 36 / If needed the TopologyElement and Path objects may be delayed from the previous simple service element on a single subnet story until this one. / Times New Roman / 0 / left / left-to-right / 36 / At this point the user is not controlling the configuration, it is set. Controlling the configuration of the discovery system is in the next story.

| ID | WBS | Task | Type | Predecessors | Complete | Constraint | Resources | Work | Actual work |
| --- | --- | --- | --- | --- | --- | --- | --- | --- | --- |
| 84 | 9.2 | **Discovery Manager** |  |  |  |  |  |  |  |
| 85 | 9.2.1 | Discover Stages flow from Subnet scan to layer2 topology discovery. |  |  | 100% |  | David Chan | 6h | 6h |
| 86 | 9.2.2 | Input Service Element Type extension from Yaml file. |  | 85 | 100% |  | David Chan | 4h | 4h |
| 87 | 9.2.3 | Extended Service Element Type selection based on technology capabilities or Current configured. For example, |  | 86 | 100% |  | David Chan | 8h | 8h |
| 88 | 9.2.4 | Design CDP Data Link Discovery algorithm. |  | 87 | 100% |  | David Chan | 16h | 16h |
| 89 | 9.2.5 | Implement CDP Data Link discover based on CDP Data Link discovery algorithm. |  | 88 | 100% |  | David Chan | 16h | 16h |
| 90 | 9.2.6 | Cisco CDP global Service Element Type creation. |  | 89 | 100% |  | David Chan | 2h | 2h |
| 91 | 9.2.7 | Cisco CDP cache Service Element Type creation |  | 90 | 100% |  | David Chan | 2h | 2h |
| 92 | 9.2.8 | Completion of discover stages flow from Subnet scan to layer2 toplogy discovery |  | 91 |  |  | David Chan | 2h |  |
| 93 | 9.2.9 | Sprint 7 | milestone |  |  | start no earlier than 2014-07-16 |  |  |  |
| 94 | 9.2.10 | Create Topology Element based on each CDP cache Service Element. |  | 92 |  |  | David Chan | 4h |  |
| 95 | 9.2.11 | Associate path and network with inter device link (Basic) |  | 94 |  |  | David Chan | 8h |  |
| 96 | 9.2.12 | Study MiBs related to network layers |  | 95 | 100% |  | David Chan | 16h | 16h |
| 97 | 9.2.13 | Generic SNMP devices Service Element Type creation. |  | 96 |  |  | David Chan | 8h |  |
| 98 | 9.2.14 | Network devices data link capability determination. |  | 97 |  |  | David Chan | 8h |  |
| 99 | 9.2.15 | Network forwarding capability determination. |  | 98 |  |  | David Chan | 2h |  |
| 100 | 9.2.16 | Vlan study and implementation |  | 99 |  |  | David Chan | 8h |  |
| 101 | 9.2.17 | Finish Design Topology / Discovery |  | 100 |  |  | David Chan | 4h |  |
| 102 | 9.2.18 | Implement VLAN Algorithm |  | 101 |  |  | David Chan | 24h |  |
| 103 | 9.2.19 | Implement Layer 3 Topology Algorithm |  | 102 |  |  | David Chan | 24h |  |
| 104 | 9.2.20 | YAML For Layer 3 Topology, SEMOs, SETS, Capabilities, Technology Tree, |  | 103 |  | start no earlier than 2014-07-02 |  |  |  |
| 105 | 9.2.21 | Update/Revise Design Document for Topology Discovery and Design Review |  | 104 |  | start no earlier than 2014-07-02 |  |  |  |
| 106 | 9.2.22 | Implement the network object for all interfaces |  | 105 |  | start no earlier than 2014-07-02 |  |  |  |
| 107 | 9.2.23 | Sprint 8 | milestone |  |  | start no earlier than 2014-07-30 |  |  |  |
| 108 | 9.2.24 | Implement ip routing for layer 3 inter device link |  |  |  |  | David Chan | 24h |  |
| 109 | 9.2.25 | Implement discovery stages start from subnet scan to layer 2 topology discovery |  |  |  |  | David Chan | 8h |  |
| 110 | 9.2.26 | Vendor Containment selector based on signature. The result of the selection will include the top service element type and the containment. |  |  |  |  | David Chan | 4h |  |
| 111 | 9.2.27 | Topology element creation |  |  |  |  | David Chan | 8h |  |
| 112 | 9.2.28 | Implement CDP Data Link discover based on CDP Data Link discovery algorithm. |  |  |  |  | David Chan | 16h |  |
| 113 | 9.2.29 | implement level 2 topology base on a spanning tree |  |  |  |  | David Chan | 8h |  |
| 114 | 9.2.30 | Layer 3 Discovery |  |  |  |  | David Chan | 16h |  |
| 115 | 9.2.31 | Discovery of location information and parsing SysLocation |  |  |  |  | David Chan | 16h |  |
| 116 | 9.2.32 | Sprint 9 | milestone |  |  | start no earlier than 2014-08-12 |  |  |  |
| 117 | 9.2.33 | Sprint 10 | milestone |  |  | start no earlier than 2014-08-26 |  |  |  |

| ID | WBS | Task | Type | Predecessors | Complete | Constraint | Resources | Work | Actual work |
| --- | --- | --- | --- | --- | --- | --- | --- | --- | --- |
| 118 | 9.3 | **Domain Knowledge** |  |  |  |  |  |  |  |
| 119 | 9.3.1 | Finish Design topology / discovery |  |  |  |  | Jon Saperia | 16h |  |
| 120 | 9.3.2 | Make the first version of the technology tree |  | 119 |  |  | Jon Saperia | 8h |  |
| 121 | 9.3.3 | Define Topology Discovery Process/Algorithm |  | 120 |  |  | Jon Saperia | 24h |  |
| 122 | 9.3.4 | Diagram & describe topology discovery |  | 121 |  |  | Jon Saperia | 16h |  |
| 123 | 9.3.5 | Load domain knowledge for CDP, IpRouteTable, VLANs |  | 122 |  |  | Jon Saperia | 8h |  |
| 124 | 9.3.6 | Learn how to get the precise physical location of a device using SNMP at Harvard |  | 123 |  |  | Jon Saperia | 24h |  |
| 125 | 9.4 | **User Interface** |  |  |  |  |  |  |  |
| 126 | 9.4.1 | Define graphic topology layout algoritms |  |  | 100% |  | Joel Huang | 8h | 8h |
| 127 | 9.4.2 | Research on Network Layout Algorithms |  | 126 | 100% |  | Joel Huang | 16h | 16h |
| 128 | 9.4.3 | Using Third Party's Network Layout Algorithms for Network Map |  | 127 | 100% |  | Joel Huang | 16h | 16h |
| 129 | 9.4.4 | Create Single Circular Layout Algorithms for Network Map |  | 128 | 100% | start no earlier than 2014-07-08 | Joel Huang | 8h | 8h |
| 130 | 9.4.5 | Display Topology Information Based on Selection - Link Details screen |  | 129 |  |  | Joel Huang | 16h |  |
| 131 | 9.4.6 | Display Topology Information Based on Selection - Display Links |  | 130 | 50% |  | Joel Huang | 16h | 8h |
| 132 | 9.4.7 | Display Topology Information Based on Selection - Tooltips |  | 131 |  |  | Joel Huang | 16h |  |
| 133 | 9.4.8 | Sprint 7 | milestone |  |  | start no earlier than 2014-07-15 |  |  |  |
| 134 | 9.4.9 | Display Paths in Graphics |  | 132 |  |  | Joel Huang | 12h |  |
| 135 | 9.4.10 | Service Element Path |  | 134 |  |  | Joel Huang | 16h |  |
| 136 | 9.4.11 | Display Topology Information Based on Selection - Display link Interface |  | 135 |  |  | Joel Huang | 16h |  |
| 137 | 9.4.12 | Display Topology Information Based on Selection - Drag Links |  | 136 |  |  | Joel Huang | 16h |  |
| 138 | 9.4.13 | Network Icon Selection in Graphics Topology for Networks |  | 137 |  |  | Joel Huang | 16h |  |
| 139 | 9.4.14 | Network Map for User Selected Network with Connected Service Elements |  | 138 |  |  | Joel Huang | 16h |  |
| 140 | 9.4.15 | Sprint 8 | milestone |  |  | start no earlier than 2014-07-29 |  |  |  |
| 141 | 9.4.16 | Create Selection |  | 139 |  |  | Joel Huang | 16h |  |
| 142 | 9.4.17 | Contained Service Elements Hierarchy Tree View |  | 141 |  |  | Joel Huang | 16h |  |
| 143 | 9.4.18 | Modify Selection |  | 142 |  |  | Joel Huang | 16h |  |
| 144 | 9.4.19 | Show all Selection |  | 143 |  |  | Joel Huang | 16h |  |
| 145 | 9.4.20 | Delete Selection |  | 144 |  |  | Joel Huang | 16h |  |
| 146 | 9.4.21 | Show Current Selection |  | 145 |  |  | Joel Huang | 16h |  |
| 147 | 9.4.22 | Sprint 9 | milestone |  |  | start no earlier than 2014-08-12 |  |  |  |
| 148 | 9.4.23 | Tabular Display for All Netowrks |  | 146 |  |  | Joel Huang | 16h |  |
| 149 | 9.4.24 | Tabular Display for All Service Element |  | 148 |  |  | Joel Huang | 16h |  |
| 150 | 9.4.25 | Folder Display for Topology Networks |  | 149 |  |  | Joel Huang | 16h |  |
| 151 | 9.4.26 | Folder Display for Topology Service Elements |  | 150 |  |  | Joel Huang | 16h |  |
| 152 | 9.4.27 | Icon Work |  | 151 |  |  | Joel Huang | 24h |  |
| 153 | 9.4.28 | Sprint 10 | milestone |  |  | start no earlier than 2014-08-26 |  |  |  |
| 154 | 9.4.29 | Design for UI for the display of selections |  |  | 100% |  | Joel Huang | 4h | 4h |
| 155 | 9.4.30 | Basic Multiple Level Zoom |  |  |  |  | Joel Huang | 8h |  |
| 156 | 9.4.31 | Show Device Service Elements with Single/Multiple Level Zoom |  |  |  |  | Joel Huang | 8h |  |
| 157 | 9.4.32 | Display topology hierarchy |  |  | 100% |  | Joel Huang | 40h | 40h |
| 158 | 9.4.33 | Map Views, Providers, Locations, Service |  |  |  |  | Joel Huang | 24h |  |
| 159 | 9.4.34 | Design how information about icon locations for different backgrounds/perspectives is saved/used. |  |  |  |  | Joel Huang | 3h |  |
| 160 | 9.4.35 | Service Element Filtered View |  |  |  |  | Joel Huang | 24h |  |
| 161 | 9.4.36 | Show Topology Elements in Database with Single/Multiple Level Zoom |  |  |  |  | Joel Huang | 24h |  |
| 162 | 9.4.37 | Graphics Topology for Networks |  |  |  |  | Joel Huang | 16h |  |
| 163 | 9.4.38 | Show Topology Elements and Adjacencies in Database |  |  | 100% |  | Joel Huang | 32h | 32h |
| 164 | 9.4.39 | Selection Functions for Networks |  |  |  |  | Joel Huang | 16h |  |
| 165 | 9.4.40 | Selection Functions for Technology |  |  |  |  | Joel Huang | 16h |  |
| 166 | 9.4.41 | Selection Functions for Category |  |  |  |  | Joel Huang | 16h |  |
| 167 | 9.4.42 | Selection Functions for Category |  |  |  |  | Joel Huang | 16h |  |
| 168 | 9.4.43 | Ability to see objects (e.g., SNMP object) that are behind the properties displayed (i.e., Capability) |  |  |  |  | Joel Huang | 16h |  |
| 169 | 9.4.44 | Alarm View |  |  |  |  | Joel Huang | 16h |  |
| 170 | 9.4.45 | Email Report |  |  |  |  | Joel Huang | 16h |  |
| 171 | 9.4.46 | Design Email Report |  |  |  |  | Joel Huang | 16h |  |

| ID | WBS | Task | Predecessors | Complete | Constraint | Resources | Work | Actual work |
| --- | --- | --- | --- | --- | --- | --- | --- | --- |
| 172 | 10 | **Creating Selections** | 41 |  |  |  |  |  |
| 173 | 10.1 | **Data Storage Functions** |  |  |  |  |  |  |
| 174 | 10.1.1 | Filter Design |  |  | start no earlier than 2014-07-02 | David Taylor | 16h |  |
| 175 | 10.1.2 | Filter, Classes, Tables | 174 |  | start no earlier than 2014-07-02 | David Taylor | 8h |  |
| 176 | 10.1.3 | Filter add, delete, modify | 175 |  | start no earlier than 2014-07-02 | David Taylor | 8h |  |
| 177 | 10.1.4 | Filter on business service, provider, criticality, service element type, location and organization | 176 |  | start no earlier than 2014-07-02 | David Taylor | 16h |  |
| 178 | 10.1.5 | Filter on Layer attribtues | 177 |  | start no earlier than 2014-07-02 | David Taylor | 8h |  |
| 179 | 10.1.6 | Add sort to selection | 178 |  | start no earlier than 2014-07-02 | David Taylor | 8h |  |
| 180 | 10.2 | API for Ad-Hoc selections | 179 |  | start no earlier than 2014-07-02 | David Taylor | 2h |  |
| 181 | 10.3 | API to get list of selections | 180 |  | start no earlier than 2014-07-02 | David Taylor | 8h |  |
| 182 | 10.4 | **User Interface** |  |  | start no earlier than 2014-06-02 |  |  |  |
| 183 | 10.4.1 | Map Filters |  |  | start no earlier than 2014-07-03 | Joel Huang | 24h |  |
| 184 | 10.4.2 | Topology Element Filtered View | 183 |  | start no earlier than 2014-07-03 | Joel Huang | 24h |  |
| 185 | 10.4.3 | Filter Selection Panel | 184 |  | start no earlier than 2014-07-03 | Joel Huang | 24h |  |
| 186 | 10.4.4 | Filter Selection Panel - Location by Filter class | 185 | 100% | start no earlier than 2014-07-03 | Joel Huang | 16h | 16h |
| 187 | 10.4.5 | Filter Selection Panel - Location Control | 186 | 100% | start no earlier than 2014-07-03 | Joel Huang | 16h | 16h |
| 188 | 10.4.6 | Filter Selection Panel - Technology Tree Control | 187 | 100% | start no earlier than 2014-07-03 | Joel Huang | 16h | 16h |
| 189 | 10.4.7 | Filter Selection Panel - Technology Tree by Filter Class | 188 | 100% | start no earlier than 2014-07-03 | Joel Huang | 16h | 16h |
| 190 | 10.4.8 | Add location information in the Discovery process | 189 |  | start no earlier than 2014-07-03 | Joel Huang | 16h |  |
| 191 | 10.4.9 | Create Selection | 190 |  | start no earlier than 2014-07-03 | Joel Huang | 16h |  |
| 192 | 10.4.10 | Modify Selection | 191 |  | start no earlier than 2014-07-03 | Joel Huang | 16h |  |
| 193 | 10.4.11 | Delete Selection | 192 |  | start no earlier than 2014-07-03 | Joel Huang | 16h |  |
| 194 | 10.4.12 | Show All Selection | 193 |  | start no earlier than 2014-07-03 | Joel Huang | 16h |  |
| 195 | 10.4.13 | Show Current Selection | 194 |  | start no earlier than 2014-07-03 | Joel Huang | 16h |  |
| 196 | 10.5 | INT-241 Filter API | 181 |  |  | David Taylor | 16h |  |

Notes:
- 172: Times New Roman / 0 / left / left-to-right / 36 / We want users to be able to create, modify and delete selections (selections contain: filters, views and layers – see documentation). We want them be able to list selections and to cause their exectuion with results on the screen, in reports or other export functions - accomplished by the view portion of the selection. That also controls whether the information is graphically displayed or in table form. / Times New Roman / 0 / left / left-to-right / 36 / In first release all filters and views are per[user] group.

| ID | WBS | Task | Predecessors | Constraint | Resources | Work |
| --- | --- | --- | --- | --- | --- | --- |
| 197 | 11 | **C onfigure the discovery system** | 172 |  |  |  |
| 198 | 11.1 | **Data Service** |  | start no earlier than 2014-06-02 |  |  |
| 199 | 11.1.1 | Schedule Mgr |  |  | David Taylor | 24h |
| 200 | 11.2 | Data Storage Functions |  | start no earlier than 2014-06-02 |  |  |
| 201 | 11.3 | Deployment |  | start no earlier than 2014-06-02 |  |  |
| 202 | 11.4 | **Discovery Service** |  | start no earlier than 2014-06-02 |  |  |
| 203 | 11.4.1 | Discovery - errors/progress |  |  | David Taylor | 16h |
| 204 | 11.4.2 | Discovery List |  |  | David Taylor | 8h |
| 205 | 11.4.3 | Discovery Stop |  |  | David Taylor | 8h |
| 206 | 11.4.4 | Discovery , Schedule, Get next runtime |  |  | David Taylor | 16h |
| 207 | 11.4.5 | Discovery, Defaults |  |  | David Taylor | 8h |
| 208 | 11.5 | Domain Knowledge |  | start no earlier than 2014-06-02 |  |  |
| 209 | 11.6 | Inventory Manager |  | start no earlier than 2014-06-02 |  |  |
| 210 | 11.7 | **Discovery Manager** |  | start no earlier than 2014-06-04 |  |  |
| 211 | 11.7.1 | Implement SHMP V3 access |  |  | David Chan | 16h |
| 212 | 11.8 | Report Service |  | start no earlier than 2014-06-02 |  |  |
| 213 | 11.9 | **User Interface** |  | start no earlier than 2014-06-02 |  |  |
| 214 | 11.9.1 | Device Discovery Information Screen |  |  | Joel Huang | 16h |
| 215 | 12 | **Defining an Systems Inventory Report** | 197 |  |  |  |
| 216 | 12.1 | associate the basic service element type designed by loren |  |  | David Chan | 16h |
| 217 | 12.2 | Data Service |  | start no earlier than 2014-06-02 |  |  |
| 218 | 12.3 | Data Storage Functions |  | start no earlier than 2014-06-02 |  |  |
| 219 | 12.4 | Deployment |  | start no earlier than 2014-06-02 |  |  |
| 220 | 12.5 | Discovery Service |  | start no earlier than 2014-06-02 |  |  |
| 221 | 12.6 | Domain Knowledge |  | start no earlier than 2014-06-02 |  |  |

Notes:
- 197: Times New Roman / 0 / left / left-to-right / 36 / The system has just been deployed and the user would like to set up a general discovery by defining the subnets, hops from the seed subnets to search, default community strings for SNMP and their priority on a global and per subnet basis, and which Service Element Types to exclude from the discovery. / Times New Roman / 0 / left / left-to-right / 36 / They are also able to control the technologies used in the topology discovery and what to look for in the ServiceElementDiscovery phase.
- 215: Times New Roman / 0 / left / left-to-right / 36 / The user would like a periodic report (a single report instance is also possible) that lists the entire 'inventory' in the system as of a specified date. They will be able to select the fields they would like included for each Service Element, Types of Service Elements, including listing them in a way that includes child Service Elements like disks etc and interfaces. This will also show the parent chiled relationship(s). / Times New Roman / 0 / left / left-to-right / 36 / For now, this report will also be exportable in JSON format.

| ID | WBS | Task | Predecessors | Constraint | Resources | Work |
| --- | --- | --- | --- | --- | --- | --- |
| 222 | 12.7 | **Inventory Manager** |  | start no earlier than 2014-06-02 |  |  |
| 223 | 12.7.1 | Inventory Manager design |  |  | David Taylor | 32h |
| 224 | 12.8 | **Report Service** |  | start no earlier than 2014-06-02 |  |  |
| 225 | 12.8.1 | Report JSON output of service element |  |  | David Taylor | 16h |
| 226 | 12.8.2 | Report Mgr design |  |  | David Taylor | 32h |
| 227 | 12.9 | User Interface |  | start no earlier than 2014-06-02 |  |  |
| 228 | 12.10 | **Discovery Manager** |  | start no earlier than 2014-06-04 |  |  |
| 229 | 12.10.1 | implement the differences matrix for add and delete for sub service element |  |  | David Chan | 16h |
| 230 | 12.10.2 | Element on DB the output of the matrix is using for inventory |  |  | David Chan | 8h |
| 231 | 12.10.3 | define the differences matrix between a discovered service element against a same service |  |  | David Chan | 16h |
| 232 | 12.10.4 | implement the differences matrix for attribute changing during discovery |  |  | David Chan | 8h |
| 233 | 12.11 | Send discovery complete and errors to UI |  |  | Jon Saperia | 32h |
| 234 | 13 | **Maintain Users, groups, and access policies and Contact information** | 215 |  |  |  |
| 235 | 13.1 | **Data Service** |  | start no earlier than 2014-06-02 |  |  |
| 236 | 13.1.1 | Add specific location information format to system |  |  | David Taylor | 16h |
| 237 | 13.1.2 | Allow User Log Out |  | start no earlier than 2014-05-22 | David Taylor | 8h |
| 238 | 13.2 | **Data Storage Functions** |  | start no earlier than 2014-06-02 |  |  |
| 239 | 13.2.1 | System control, user, role, add, delete, modify |  |  | David Taylor | 8h |
| 240 | 13.2.2 | System Control, Role, add, delete, modify |  |  | David Taylor | 8h |
| 241 | 13.2.3 | System Controls, Vendor discovery template, add, delete, modify |  |  | David Taylor | 16h |
| 242 | 13.3 | Deployment |  | start no earlier than 2014-06-02 |  |  |
| 243 | 13.4 | Discovery Service |  | start no earlier than 2014-06-02 |  |  |
| 244 | 13.5 | Domain Knowledge |  | start no earlier than 2014-06-02 |  |  |
| 245 | 13.6 | Inventory Manager |  | start no earlier than 2014-06-02 |  |  |
| 246 | 13.7 | Report Service |  | start no earlier than 2014-06-02 |  |  |

Notes:
- 234: Times New Roman / 0 / left / left-to-right / 36 / Allows operators to create new users, change their roles and reset password or disable/delete user. For those users that are externally authenticated such as with CAS, there will be no password. / Times New Roman / 0 / left / left-to-right / 36 / Classes included in this work are Organization, AuthNInfo, Contact, User, Role, Access Policy and CalendarPolicy. / Times New Roman / 0 / left / left-to-right / 36 / Also required is the UserContactAndRoleManager.

| ID | WBS | Task | Predecessors | Constraint | Resources | Work |
| --- | --- | --- | --- | --- | --- | --- |
| 247 | 13.8 | **User Interface** |  | start no earlier than 2014-06-02 |  |  |
| 248 | 13.8.1 | User Group, Roles |  |  | Joel Huang | 32h |
| 249 | 13.8.2 | Add User Log Out |  | start no earlier than 2014-05-22 | Joel Huang | 16h |
| 250 | 14 | **Show Discovery Status and Events** | 234 |  |  |  |
| 251 | 14.1 | **Data Service** |  |  |  |  |
| 252 | 14.1.1 | Add JMS topic for updates to GUI |  |  | David Taylor | 24h |
| 253 | 14.1.2 | Add Message receiver to FE server for update messages |  |  | David Taylor | 16h |
| 254 | 14.1.3 | Add Message sender (for update messages) |  |  | David Taylor | 24h |
| 255 | 14.1.4 | Send update message to GUI (from FE server) |  |  | David Taylor | 24h |
| 256 | 14.1.5 | JMS, Message manager - register for messages |  |  | David Taylor | 24h |
| 257 | 14.1.6 | JMS , Config wildfly |  |  | David Taylor | 16h |
| 258 | 14.1.7 | JMS, update messages |  |  | David Taylor | 24h |
| 259 | 14.1.8 | JMS event message |  |  | David Taylor | 16h |
| 260 | 14.1.9 | JMS message sender |  |  | David Taylor | 24h |
| 261 | 14.1.10 | JMS message receiver. |  |  | David Taylor | 24h |
| 262 | 14.2 | **Data Storage Functions** |  | start no earlier than 2014-06-02 |  |  |
| 263 | 14.2.1 | Filter, apply to events |  |  | David Taylor | 24h |
| 264 | 14.3 | Deployment |  | start no earlier than 2014-06-02 |  |  |
| 265 | 14.4 | **Discovery Service** |  | start no earlier than 2014-06-02 |  |  |
| 266 | 14.4.1 | Log and create audit message for Discovery complete and errors. |  |  | David Taylor | 8h |
| 267 | 14.4.2 | Server - Discovery status propagation via API |  |  | David Taylor | 24h |
| 268 | 14.4.3 | Discovery - Realtime status information of all discoveries in process |  |  | David Taylor | 8h |
| 269 | 14.4.4 | API to GUI for Topology Information |  |  | David Taylor | 24h |
| 270 | 14.5 | Domain Knowledge |  | start no earlier than 2014-06-02 |  |  |
| 271 | 14.6 | Inventory Manager |  | start no earlier than 2014-06-02 |  |  |
| 272 | 14.7 | Report Service |  | start no earlier than 2014-06-02 |  |  |

Notes:
- 250: Times New Roman / 0 / left / left-to-right / 36 / A user has started a discovery (or it has been kicked off by a calendar). They want to see the status of the discovery and any possible errors that come up during the discovery process. This information should be presented via the common alarm and event manager window.

| ID | WBS | Task | Predecessors | Constraint | Resources | Work |
| --- | --- | --- | --- | --- | --- | --- |
| 273 | 14.8 | **User Interface** |  | start no earlier than 2014-06-02 |  |  |
| 274 | 14.8.1 | UI Show status of discoveries |  |  | Joel Huang | 8h |
| 275 | 14.8.2 | Events |  |  | Joel Huang | 40h |
| 276 | 14.8.3 | UI - Show discovery errors and completion |  |  | Joel Huang | 8h |
| 277 | 14.9 | Integration of State information into the model (and later system) |  |  | Jon Saperia | 8h |
| 278 | 15 | **Creating and managing topology and service element discovery policies** | 250 |  |  |  |
| 279 | 15.1 | Update complete discovery document |  |  | Jon Saperia | 16h |
| 280 | 15.2 | Data Service |  | start no earlier than 2014-06-02 |  |  |
| 281 | 15.3 | **Data Storage Functions** |  | start no earlier than 2014-06-02 |  |  |
| 282 | 15.3.1 | INT-241 Device Details of Discovery API, Last Times discovered, change found, next planned discovery |  |  | David Taylor | 8h |
| 283 | 15.4 | Deployment |  | start no earlier than 2014-06-02 |  |  |
| 284 | 15.5 | Discovery Service |  | start no earlier than 2014-06-02 |  |  |
| 285 | 15.6 | Domain Knowledge |  | start no earlier than 2014-06-02 |  |  |
| 286 | 15.7 | Inventory Manager |  | start no earlier than 2014-06-02 |  |  |
| 287 | 15.8 | Report Service |  | start no earlier than 2014-06-02 |  |  |
| 288 | 15.9 | User Interface |  | start no earlier than 2014-06-02 |  |  |
| 289 | 16 | **Defining a Change Report** | 278 |  |  |  |
| 290 | 16.1 | Data Service |  | start no earlier than 2014-06-02 |  |  |
| 291 | 16.2 | Data Storage Functions |  | start no earlier than 2014-06-02 |  |  |
| 292 | 16.3 | Deployment |  | start no earlier than 2014-06-02 |  |  |
| 293 | 16.4 | Discovery Service |  | start no earlier than 2014-06-02 |  |  |
| 294 | 16.5 | Domain Knowledge |  | start no earlier than 2014-06-02 |  |  |
| 295 | 16.6 | Inventory Manager |  | start no earlier than 2014-06-02 |  |  |
| 296 | 16.7 | Report Service |  | start no earlier than 2014-06-02 |  |  |

Notes:
- 278: Times New Roman / 0 / left / left-to-right / 36 / A user has set up discovery and it is running periodically. They have not yet set up any policies about what to do when new systems are discovered, changed, or missing. They wish to set up policies that tell the system what to do in all these cases as well as define some rules about when a system is deemed changed, missing or new. / Times New Roman / 0 / left / left-to-right / 36 / If needed we can delay the implemenation of the ImsSchedulingManager and Calendar and CalendarPolicy in this release.
- 289: Times New Roman / 0 / left / left-to-right / 36 / The general case is that a user would like periodic reports of information in the system that may change over time. In this case, they are interested in getting a report every 24 hours of the Service Elements that have changed since the last report was run (it may not always be the case that report interval is the same as the time interval to report on). The report rules are defined by the Policy and Inventory Handling parameters in a selected policy. / Times New Roman / 0 / left / left-to-right / 36 / The InventoryManager must be implemented for this story.

| ID | WBS | Task | Predecessors | Complete | Constraint | Resources | Work | Actual work |
| --- | --- | --- | --- | --- | --- | --- | --- | --- |
| 297 | 16.8 | **User Interface** |  |  | start no earlier than 2014-06-02 |  |  |  |
| 298 | 16.8.1 | Inventory Report Control and Display |  |  |  | Joel Huang | 40h |  |
| 299 | 17 | **Viewing Reports and ad hoc export of data** | 289 |  |  |  |  |  |
| 300 | 17.1 | Data Service |  |  | start no earlier than 2014-06-02 |  |  |  |
| 301 | 17.2 | Data Storage Functions |  |  | start no earlier than 2014-06-02 |  |  |  |
| 302 | 17.3 | Deployment |  |  | start no earlier than 2014-06-02 |  |  |  |
| 303 | 17.4 | Infrastructure |  |  | start no earlier than 2014-06-04 |  |  |  |
| 304 | 17.5 | Discovery Service |  |  | start no earlier than 2014-06-02 |  |  |  |
| 305 | 17.6 | Domain Knowledge |  |  | start no earlier than 2014-06-02 |  |  |  |
| 306 | 17.7 | Inventory Manager |  |  | start no earlier than 2014-06-02 |  |  |  |
| 307 | 17.8 | Report Service |  |  | start no earlier than 2014-06-02 |  |  |  |
| 308 | 17.9 | User Interface |  |  | start no earlier than 2014-06-02 |  |  |  |
| 309 | 18 | **Deploy Skeleton System** | 299 |  |  |  |  |  |
| 310 | 18.1 | **Data Service** |  |  | start no earlier than 2014-06-02 |  |  |  |
| 311 | 18.1.1 | INT-241 Need system requirements description of configurable items Install/ Config/RMe |  |  |  | David Taylor | 8h |  |
| 312 | 18.1.2 | INT-241 Document verify that “invalid, self signal” certs may be used in test instances |  |  |  | David Taylor | 8h |  |
| 313 | 18.1.3 | work with loren and dave chan to bring together technologies/ and discovery and topology |  |  |  | David Taylor | 16h |  |
| 314 | 18.2 | **Data Storage Functions** |  |  | start no earlier than 2014-06-02 |  |  |  |
| 315 | 18.2.1 | YAML, Read in, technology, capability, SET |  | 100% |  | David Taylor | 16h | 16h |
| 316 | 18.3 | Deployment |  |  | start no earlier than 2014-06-02 |  |  |  |
| 317 | 18.4 | Discovery Service |  |  | start no earlier than 2014-06-02 |  |  |  |
| 318 | 18.5 | Domain Knowledge |  |  | start no earlier than 2014-06-02 |  |  |  |
| 319 | 18.6 | Inventory Manager |  |  | start no earlier than 2014-06-02 |  |  |  |
| 320 | 18.7 | Report Service |  |  | start no earlier than 2014-06-02 |  |  |  |
| 321 | 18.8 | Infrastructure |  |  | start no earlier than 2014-06-04 |  |  |  |
| 322 | 18.9 | User Interface |  |  | start no earlier than 2014-06-02 |  |  |  |
| 323 | 18.10 | Create class, table and queries to store Distributed manager/services configuration |  | 100% |  | David Taylor | 8h | 8h |
| 324 | 18.11 | Integrate CAS plug-in and software into our System |  |  | start no earlier than 2014-06-03 | David Taylor | 16h |  |

Notes:
- 299: Times New Roman / 0 / left / left-to-right / 36 / The user will be able to select which report (s) to view what to print, export and send in mail. / Times New Roman / 0 / left / left-to-right / 36 / Any report should be able to be filtered by an existing filter.
- 309: Times New Roman / 0 / left / left-to-right / 36 / Basic system up and running in the data center

| ID | WBS | Task | Predecessors | Constraint | Resources | Work |
| --- | --- | --- | --- | --- | --- | --- |
| 325 | 19 | **A full set of deployment and configuration instructions** | 309 |  |  |  |
| 326 | 19.1 | Data Service |  | start no earlier than 2014-06-02 |  |  |
| 327 | 19.2 | Data Storage Functions |  | start no earlier than 2014-06-02 |  |  |
| 328 | 19.3 | Deployment |  | start no earlier than 2014-06-02 |  |  |
| 329 | 19.4 | **Infrastructure** |  | start no earlier than 2014-06-04 |  |  |
| 330 | 19.4.1 | Security recommendations for integer deployment |  |  | Jon Saperia | 16h |
| 331 | 19.5 | Discovery Service |  | start no earlier than 2014-06-02 |  |  |
| 332 | 19.6 | Domain Knowledge |  | start no earlier than 2014-06-02 |  |  |
| 333 | 19.7 | Inventory Manager |  | start no earlier than 2014-06-02 |  |  |
| 334 | 19.8 | Report Service |  | start no earlier than 2014-06-02 |  |  |
| 335 | 19.9 | User Interface |  | start no earlier than 2014-06-02 |  |  |
| 336 | 20 | **New System Controls** | 325 |  |  |  |
| 337 | 20.1 | Data Service |  | start no earlier than 2014-06-02 |  |  |
| 338 | 20.2 | Data Storage Functions |  | start no earlier than 2014-06-02 |  |  |
| 339 | 20.3 | Deployment |  | start no earlier than 2014-06-02 |  |  |
| 340 | 20.4 | Discovery Service |  | start no earlier than 2014-06-02 |  |  |
| 341 | 20.5 | Domain Knowledge |  | start no earlier than 2014-06-02 |  |  |
| 342 | 20.6 | Inventory Manager |  | start no earlier than 2014-06-02 |  |  |
| 343 | 20.7 | Report Service |  | start no earlier than 2014-06-02 |  |  |
| 344 | 20.8 | **User Interface** |  | start no earlier than 2014-06-02 |  |  |
| 345 | 20.8.1 | Advanced System Control |  |  | Joel Huang | 40h |
| 346 | 21 | User installable instance of Integer |  |  | Jon Saperia | 8h |
| 347 | 22 | Integrate LDAP Attribute Service while using CAS |  | start no earlier than 2014-06-03 | David Taylor | 16h |
| 348 | 23 | Identify Service Element (Routing Load Balance) |  | start no earlier than 2014-05-22 | David Chan | 16h |
| 349 | 24 | Map IPv4 address to Interface as example of generic way to get mappings |  |  | David Taylor | 8h |
| 350 | 25 | INT-241 Save Path |  |  | David Taylor | 8h |
| 351 | 26 | Basic Inter device link creation including physical media association |  |  | Unassigned | 8h |
| 352 | 27 | Parse sys location - Needs to be a plug in |  |  | David Taylor | 8h |
| 353 | 28 | Collect & consolidate SNMP credentials for Harvard’s installation |  |  | David Taylor | 16h |

Notes:
- 325: Arial / 14 / left / left-to-right / 36 / We need a full set of deployment and configuration instructions for Integer.
- 336: 12 / left / left-to-right / 36 / After the system has been set up and initial information entered, the systems operator will want to be able to control various aspects of the system behavior. These include, distributed component control, start/stop discovery and reporting. This is a basic set for the first release.
- 346: Arial / 14 / left / left-to-right / 36 / User installable instance of Integer
