Schedule from OmniPlan.
Project start 2014-07-18

## Resources

| Resource | Group |
| --- | --- |
| Resource 1 | staff |
| Equipment 1 | equipment |
| Material 1 | material |
| Group 1 | group |
| Dave Taylor | staff |
| Eric Remington | staff |
| David Chan | staff |
| Joel Huang | staff |
| Jon Saperia | staff |
| Mark Bombalicki | staff |

## Schedule

| ID | WBS | Task | Type | Complete | Constraint | Resources | Work | Actual work |
| --- | --- | --- | --- | --- | --- | --- | --- | --- |
| 1 | 1 | **Discovery** |  |  |  |  |  |  |
| 2 | 1.1 | **Clean up tasks from earlier sprints** |  |  | start no earlier than 2014-08-06 |  |  |  |
| 3 | 1.1.1 | Create unknown when we can not figure out containment. |  | 100% | start no earlier than 2014-08-07 | David Chan | 8h | 8h |
| 4 | 1.2 | Sprint 10 | milestone |  | start no earlier than 2014-08-21 | Dave Taylor; David Chan; Eric Remington; Joel Huang; Jon Saperia; Mark Bombalicki |  |  |
| 5 | 1.3 | Sprint 11 | milestone |  | start no earlier than 2014-09-04 | Dave Taylor; David Chan; Eric Remington; Joel Huang; Jon Saperia; Mark Bombalicki |  |  |
| 6 | 1.4 | Sprint 12 | milestone |  | start no earlier than 2014-09-18 | Dave Taylor; David Chan; Eric Remington; Joel Huang; Jon Saperia; Mark Bombalicki |  |  |
| 7 | 1.5 | Sprint 13 | milestone |  | start no earlier than 2014-10-02 | Dave Taylor; David Chan; Eric Remington; Joel Huang; Jon Saperia; Mark Bombalicki |  |  |
| 8 | 1.6 | Sprint 14 | milestone |  | start no earlier than 2014-10-16 | Dave Taylor; David Chan; Eric Remington; Joel Huang; Jon Saperia; Mark Bombalicki |  |  |
| 9 | 1.7 | **Basic User Authentication/Login/out** |  |  |  |  |  |  |
| 10 | 1.7.1 | Access via direct log-in single server system |  | 100% |  | Dave Taylor | 8h | 8h |
| 11 | 1.7.2 | Access via direct log-in to a front end and back end system |  | 100% |  | Dave Taylor | 8h | 8h |
| 12 | 1.8 | **Pre-defined users** |  |  |  |  |  |  |
| 13 | 1.8.1 | Public User |  | 100% |  | Dave Taylor | 8h | 8h |
| 14 | 1.8.2 | Administrator |  |  |  | Dave Taylor | 8h |  |
| 15 | 1.9 | **System Distribution** |  |  |  |  |  |  |
| 16 | 1.9.1 | As a single server instance in AWS |  | 100% |  | Dave Taylor | 8h | 8h |
| 17 | 1.9.2 | As a core/FE system in AWS |  | 100% |  | Dave Taylor | 8h | 8h |
| 18 | 1.9.3 | As a core/FE and discovery node. |  |  |  | Dave Taylor | 8h |  |
| 19 | 1.9.4 | As a single server instance on Mavericks |  | 100% |  | Dave Taylor | 8h | 8h |
| 20 | 1.9.5 | In a Virtualized (VMware environment) with same options as AWS |  | 67% | start no earlier than 2014-07-18 | Dave Taylor | 8h | 5.36h |
| 21 | 1.10 | **Discovery - General** |  |  |  |  |  |  |
| 22 | 1.10.1 | **Discovery and Topology Service Controls** |  |  |  |  |  |  |
| 23 | 1.10.1.1 | **Start and stop the services** |  |  |  |  |  |  |
| 24 | 1.10.1.1.1 | Start and stop by discovery rules |  | 100% | start no earlier than 2014-08-07 | Dave Taylor | 8h | 8h |
| 25 | 1.10.1.2 | Discovery List |  | 100% |  | Dave Taylor | 8h | 8h |

| ID | WBS | Task | Complete | Constraint | Resources | Work | Actual work |
| --- | --- | --- | --- | --- | --- | --- | --- |
| 26 | 1.10.2 | **Initial communication with Service Elements** |  |  |  |  |  |
| 27 | 1.10.2.1 | Calculating range of systems on a subnet to contact | 100% |  | David Chan | 8h | 8h |
| 28 | 1.10.2.2 | Establishing which SNMP version to use. |  |  | David Chan | 8h |  |
| 29 | 1.10.2.3 | Establishing alternate port |  |  | David Chan | 8h |  |
| 30 | 1.10.2.4 | Establishing correct community string. This includes not only global, but ipTopologySeed and previously discovered systems, it includes updates to service elements | 100% | start no earlier than 2014-08-08 | David Chan | 8h | 8h |
| 31 | 1.10.2.5 | Implement algorithm for uniquely identifying if parts of a device, like and interface have already been discovered and belong to the main chassis. | 100% | start no earlier than 2014-08-11 | David Chan | 8h | 8h |
| 32 | 1.10.3 | **Discovery Rule and IpTopologySeed Processing** |  |  |  |  |  |
| 33 | 1.10.3.1 | **Support for different discovery types/options:** |  |  |  |  |  |
| 34 | 1.10.3.1.1 | Service element and then topology | 100% |  | David Chan | 8h | 8h |
| 35 | 1.10.3.1.2 | Service Element Only | 100% |  | David Chan | 8h | 8h |
| 36 | 1.10.3.1.3 | Topology Only | 100% |  | David Chan | 8h | 8h |
| 37 | 1.10.3.1.4 | Technologies like servers or firewalls. (does not include determination of how they impact traffic) This requires signatures for technologies per service element type. |  |  | David Chan | 8h |  |
| 38 | 1.10.3.2 | **Processing multiple IpTopology Seeds in a discovery rule** |  |  |  |  |  |
| 39 | 1.10.3.2.1 | Handling updates to one or more IpTopologySeeds while discovery service is running. Does not require changing an in process discovery. | 100% |  | Dave Taylor | 8h | 8h |
| 40 | 1.10.3.2.2 | Excluding/Including one or more networks in one or more seeds | 100% | start no earlier than 2014-08-12 | David Chan; Dave Taylor | 8h | 8h |
| 41 | 1.10.3.2.3 | Excluding/Including one or more specific service elements in one or more seeds | 100% | start no earlier than 2014-08-12 | David Chan; Dave Taylor | 8h | 8h |
| 42 | 1.10.3.2.4 | Excluding/Including gateways in the gateway exclusion list | 50% | start no earlier than 2014-08-27 | David Chan; Dave Taylor | 8h | 4h |
| 43 | 1.10.3.2.5 | Processing the order of SNMP versions (e.g., v2c and then v3). | 100% |  | David Chan | 8h | 8h |
| 44 | 1.10.3.2.6 | Starting at initial gateway | 100% | start no earlier than 2014-08-13 | David Chan | 8h | 8h |
| 45 | 1.10.3.2.7 | Starting at initial subnet | 100% | start no earlier than 2014-08-14 | David Chan | 8h | 8h |
| 46 | 1.10.3.2.8 | Supporting N hops (radius) This includes logic to be sure that you are not including a system more than once. | 100% | start no earlier than 2014-08-15 | David Chan | 16h | 16h |
| 47 | 1.10.3.2.9 | Supporting one or more technologies to include or exclude from the discovery |  |  | David Chan | 8h |  |
| 48 | 1.10.3.2.10 | Override Global SNMP parameters with specifics in the IpTopologySeed | 100% |  | David Chan; Dave Taylor | 8h | 8h |
| 49 | 1.10.3.2.11 | Use per service element type specific signature for uniquely identifying an instance of a service element of a specific type |  | start no earlier than 2014-08-27 | David Chan | 8h |  |
| 50 | 1.10.3.2.12 | Add logic to not run multiple discoveries on a subnet |  | start no earlier than 2014-08-22 | Dave Taylor | 8h |  |

Notes:
- 44: 460
- 45: 461
- 49: 453
- 50: Arial / 14 / left / left-to-right / 36 / Add logic to not run multiple discoveries on a subnet. Need to avoid overlaps of discovery runs. / Arial / 14 / left / left-to-right / 36 / This will also queue the discoveries that overlap and run the discovery when the first discovery completes. (Do we need a flag to Not run discovery or queue Discovery?)

| ID | WBS | Task | Complete | Constraint | Resources | Work | Actual work |
| --- | --- | --- | --- | --- | --- | --- | --- |
| 51 | 1.10.3.3 | **Time out processing** |  |  |  |  |  |
| 52 | 1.10.3.3.1 | SNMP timeouts for the service element discovery manager | 100% |  | David Chan; Dave Taylor | 8h | 8h |
| 53 | 1.10.3.3.2 | SNMP retries fro the service element discovery manager | 100% |  | David Chan; Dave Taylor | 8h | 8h |
| 54 | 1.10.3.3.3 | SNMP timeouts for the topology manager | 100% |  | David Chan; Dave Taylor | 8h | 8h |
| 55 | 1.10.3.3.4 | SNMP retries for the topology manager | 100% |  | David Chan; Dave Taylor | 8h | 8h |
| 56 | 1.10.3.4 | **Processing the SnmpServiceElementOverride associated with a ServiceElementType** |  |  |  |  |  |
| 57 | 1.10.3.4.1 | Handling for the service element types for which there is an override |  | start no earlier than 2014-09-05 | David Chan; Dave Taylor | 8h |  |
| 58 | 1.10.3.4.2 | Handling retries and time out for the topology manager based on service element types |  | start no earlier than 2014-09-05 | David Chan; Dave Taylor | 8h |  |
| 59 | 1.10.3.4.3 | Handling retries and time outs for the discovery manager based on service element type |  | start no earlier than 2014-09-08 | David Chan; Dave Taylor | 8h |  |
| 60 | 1.10.3.4.4 | Following max messages outstanding limit |  | start no earlier than 2014-09-08 | David Chan; Dave Taylor | 8h |  |
| 61 | 1.10.3.4.5 | Following the maximum rate of transmission limit. |  |  | David Chan; Dave Taylor | 8h |  |
| 62 | 1.10.3.5 | Support for SNMP Global defaults for SNMP Port, Community Strings | 100% |  | David Chan; Dave Taylor | 8h | 8h |
| 63 | 1.10.4 | **SNMPv3 Support** |  |  |  |  |  |
| 64 | 1.10.4.1 | Following rules for priority in ipTopology Seed. |  |  | David Chan | 8h |  |
| 65 | 1.10.4.2 | Generation and storage of keys for Integer and coordinating key distribution with systems. |  |  | David Chan | 8h |  |
| 66 | 1.10.4.3 | Support for V3 administrative information in Global Defaults |  |  | David Chan | 8h |  |
| 67 | 1.11 | **Service Element Discovery** |  |  |  |  |  |
| 68 | 1.11.1 | Create Unknown types for when we do not have signatures for serviceElementTypes | 100% |  | David Chan | 8h | 8h |
| 69 | 1.11.2 | Create unknown category when needed. |  | start no earlier than 2014-08-28 | David Chan | 8h |  |
| 70 | 1.11.3 | **Vendor Containment Selector** |  |  |  |  |  |
| 71 | 1.11.3.1 | Based on Vendor Signature select the correct containment | 100% |  | David Chan | 8h | 8h |
| 72 | 1.11.3.2 | Correctly process top 10 vendors and create YAML and Document for Vendor Signature and containment and supporting LevelOID and discriminator objects - using the entity mib. |  | start no earlier than 2014-09-01 | David Chan | 8h |  |
| 73 | 1.11.3.3 | Correctly process top 10 vendors and create YAML and Document for Vendor Signature and containment and supporting LevelOID and discriminator objects using the host resources MIB. |  | start no earlier than 2014-09-04 | David Chan | 8h |  |
| 74 | 1.11.4 | Correctly assign category for each service element in defined in YAML Files | 100% | start no earlier than 2014-08-08 | Dave Taylor | 8h | 8h |

| ID | WBS | Task | Complete | Constraint | Resources | Work | Actual work |
| --- | --- | --- | --- | --- | --- | --- | --- |
| 75 | 1.11.5 | **ServiceElementType Identification and data collection** |  |  |  |  |  |
| 76 | 1.11.5.1 | Based on configured YAML information determine correct ServiceElementType for systems after the category has been established in the service element discovery process. This extends from the top level service element down to the lowest level including all interfaces. This includes additional objects. | 100% |  | David Chan | 8h | 8h |
| 77 | 1.11.5.2 | Correctly handle cases where do not have identification information | 100% |  | David Chan | 8h | 8h |
| 78 | 1.11.5.3 | For each service element type and category collect the additional attributes specified. | 100% |  | David Chan | 8h | 8h |
| 79 | 1.11.6 | **Network Interface and Network Object Information** |  |  |  |  |  |
| 80 | 1.11.6.1 | Retrieve all network interfaces including MAC addresses where there is a MAC address. | 100% | start no earlier than 2014-08-19 | David Chan | 8h | 8h |
| 81 | 1.11.6.2 | Make associations between interfaces showing parent/child or other relationships | 100% |  | David Chan | 8h | 8h |
| 82 | 1.11.6.3 | Correctly assign layer to the interface based on YAML in the Technology file. When assigning layer to a topology element assignment comes from service element type. | 100% | start no earlier than 2014-08-20 | David Chan | 8h | 8h |
| 83 | 1.11.6.4 | Create associated TopologyElement, InterDeviceLink And Network object. | 100% |  | David Chan | 8h | 8h |
| 84 | 1.11.6.5 | Create required Path Object | 100% | start no earlier than 2014-08-21 | David Chan | 8h | 8h |
| 85 | 1.11.6.6 | API to retrieve and save the coordinates on our display of the network objects. | 100% | start no earlier than 2014-08-07 | Dave Taylor | 8h | 8h |
| 86 | 1.11.7 | **Location Information** |  |  |  |  |  |
| 87 | 1.11.7.1 | Read sysLocation |  | start no earlier than 2014-09-18 | David Chan | 8h |  |
| 88 | 1.11.7.2 | Determine if there is a location pattern to be used and process if needed. |  | start no earlier than 2014-09-19 | David Chan | 8h |  |
| 89 | 1.11.7.3 | Create a location if there is no parse pattern and dump the full contents of sysLocation in the 'other' attribute. |  | start no earlier than 2014-09-22 | David Chan | 8h |  |
| 90 | 1.11.7.4 | Define YAML format for location. | 100% |  | Jon Saperia | 8h | 8h |
| 91 | 1.11.7.5 | Populate Location information from YAML | 100% |  | Dave Taylor | 8h | 8h |
| 92 | 1.11.8 | **Technology Discovery** |  |  |  |  |  |
| 93 | 1.11.8.1 | YAML for Technology Tree | 100% |  | Jon Saperia | 8h | 8h |
| 94 | 1.11.8.2 | YAML to connect technology tree to mechanisms and capabilities and SEMOs |  | start no earlier than 2014-09-15 | David Chan | 8h |  |
| 95 | 1.11.8.3 | Definition of technology signatures in YAML and processing same. For example is this service element doing load balancing, NAT, database, middleware or other functions. |  |  | David Chan | 8h |  |
| 96 | 1.11.9 | **Topology/Discovery Manager Functions** |  |  |  |  |  |
| 97 | 1.11.9.1 | Starting/Stoping | 100% |  | David Chan | 8h | 8h |
| 98 | 1.11.9.2 | Following one to many discovery rules each with 1 or more IpTopologySeeds. | 100% |  | David Chan | 8h | 8h |
| 99 | 1.11.9.3 | Correctly handling overlapping topology discovery to avoid duplicate DB entires. |  | start no earlier than 2014-09-02 | David Chan | 8h |  |
| 100 | 1.11.9.4 | Creation of InterDeviceLinks | 100% |  | David Chan | 8h | 8h |
| 101 | 1.11.9.5 | Creation of Paths and contained InterDeviceLinks |  | start no earlier than 2014-08-22 | David Chan | 8h |  |
| 102 | 1.11.9.6 | Get subnet/mask information from routers for 'newly' discovered subnets (not in seeds) but within scope of radius and kick of service element discovery on that subnet (if service element discovery has been selected. | 81% | start no earlier than 2014-08-25 | David Chan | 8h | 6.5h |
| 103 | 1.11.9.7 | Rules for aggregation of multiple subnets into a navigable hierarchy. | 100% | start no earlier than 2014-08-08 | Dave Taylor | 8h | 8h |

Notes:
- 76: 448 and 441 and 439

| ID | WBS | Task | Complete | Constraint | Resources | Work | Actual work |
| --- | --- | --- | --- | --- | --- | --- | --- |
| 104 | 1.11.9.8 | **IP and Routing Layer** |  |  |  |  |  |
| 105 | 1.11.9.8.1 | Refine layer 3/routing topology discovery algorithm |  | start no earlier than 2014-09-16 | David Chan | 8h |  |
| 106 | 1.11.9.8.2 | Revise discovery document topology section based on what we have learned to date. Draw the Topology discovery process for all layers. |  | start no earlier than 2014-09-24 | Dave Taylor; David Chan; Jon Saperia | 8h |  |
| 107 | 1.11.9.8.3 | Understand, develop and write YAML for service element Types and all other required system information to tie these to the rest of the technology, and other trees for all of the IP and Routing Layer protocols. |  |  | David Chan | 8h |  |
| 108 | 1.11.9.8.4 | Using IPRouteNext hop for adjacent network - including design |  | start no earlier than 2014-09-09 | David Chan | 8h |  |
| 109 | 1.11.9.8.5 | Full layer topology |  | start no earlier than 2014-09-10 | David Chan | 8h |  |
| 110 | 1.11.9.8.6 | Getting net mask from addEntry for adjacent networks to kick off further topology and service Element Discovery. | 100% |  | David Chan | 8h | 8h |
| 111 | 1.11.9.8.7 | Map an IP route to a specific interface this includes the cases when the interface (local) does not have an IP address. | 100% | start no earlier than 2014-08-29 | David Chan | 8h | 8h |
| 112 | 1.11.9.8.8 | MAP VLAN to a specific interface | 100% |  | David Chan | 8h | 8h |
| 113 | 1.11.9.8.9 | BGP includes service element type creation and discovery algorithm design and implementation |  |  | David Chan | 8h |  |
| 114 | 1.11.9.8.10 | OSPF includes service element type creation and discovery algorithm design and implementation |  |  | David Chan | 8h |  |
| 115 | 1.11.9.8.11 | Static includes service element type creation and discovery algorithm design and implementation |  |  | David Chan | 8h |  |
| 116 | 1.11.9.9 | VLANs |  | start no earlier than 2014-08-26 | David Chan | 8h |  |
| 117 | 1.11.9.10 | **Layer 2.5 technologies** |  |  |  |  |  |
| 118 | 1.11.9.10.1 | Understand, develop and write YAML for service element Types and all other required system information to tie these to the rest of the technology, and other trees for all of the layer 2.5 technologies. |  |  |  | 8h |  |
| 119 | 1.11.9.10.2 | CDP | 100% |  | David Chan | 8h | 8h |
| 120 | 1.11.9.10.3 | VRRP |  |  | David Chan | 8h |  |
| 121 | 1.11.9.10.4 | LLDP |  |  | David Chan | 8h |  |
| 122 | 1.11.9.10.5 | MPLS |  |  | David Chan | 8h |  |
| 123 | 1.11.9.11 | Spanning tree information where possible |  |  | David Chan | 8h |  |
| 124 | 1.11.9.12 | Link bonding protocols |  |  | David Chan | 8h |  |
| 125 | 1.11.9.13 | IPVPN |  |  | David Chan | 8h |  |
| 126 | 1.11.9.14 | IPv6 |  |  | David Chan | 8h |  |
| 127 | 1.11.9.15 | Virtualization infrastructure |  |  | David Chan | 8h |  |
| 128 | 1.11.9.16 | Cloud/AWS infrastructure |  |  | David Chan | 8h |  |

Notes:
- 105: 330
- 108: 459 and 458
- 109: 457
- 111: 446
- 112: 445
- 123: 269

| ID | WBS | Task | Complete | Constraint | Resources | Work | Actual work |
| --- | --- | --- | --- | --- | --- | --- | --- |
| 129 | 1.11.9.17 | **Storage Infrastructure** |  |  |  |  |  |
| 130 | 1.11.9.17.1 | DNS - The system will resolve to the interface level DNS names. They are stored in the TopologyElement and changes tracked like other attributes. |  | start no earlier than 2014-09-25 | David Chan | 8h |  |
| 131 | 1.12 | **Support for distributed functions** |  |  |  |  |  |
| 132 | 1.12.1 | **Distributed Discovery across N different discovery systems** |  |  |  |  |  |
| 133 | 1.12.1.1 | Support for many Discovery and Topology Managers |  |  | Dave Taylor | 8h |  |
| 134 | 1.12.1.2 | Following the distribution rule (that is which systems do what discoveries based on the integerDiscoverySystemId - this means that the discovery rule says which discovery system does the work. |  |  | Dave Taylor | 8h |  |
| 135 | 1.12.1.3 | Distribution of DiscoveryRules across systems |  |  | Dave Taylor | 8h |  |
| 136 | 1.12.1.4 | Integration according to rules of data collected from distributed components |  |  | Dave Taylor | 8h |  |
| 137 | 1.12.1.5 | Coordination of time across servers - ensure that NTP is correctly installed and configured on all Integer servers. |  |  | Eric Remington | 8h |  |
| 138 | 1.12.1.6 | Updates/changes/additions to discovery rules |  |  | Dave Taylor | 8h |  |
| 139 | 1.12.1.7 | Shutdown and startup of distributed systems |  |  | Dave Taylor | 8h |  |
| 140 | 1.13 | **Messaging Services (alarms and Events)** |  |  |  |  |  |
| 141 | 1.13.1 | System state notifications |  | start no earlier than 2014-09-17 | Dave Taylor | 8h |  |
| 142 | 1.13.2 | Discovery status notifications and events this includes processing based on Inventory and Inventory Change rules |  | start no earlier than 2014-09-01 | Dave Taylor | 8h |  |
| 143 | 1.13.3 | Sending log information |  | start no earlier than 2014-09-02 | Dave Taylor | 8h |  |
| 144 | 1.13.4 | JMS, Message manager - register for messages |  | start no earlier than 2014-09-04 | Dave Taylor | 8h |  |
| 145 | 1.13.5 | Filter, apply to events |  | start no earlier than 2014-09-09 | Dave Taylor | 8h |  |
| 146 | 1.13.6 | JMS, update messages |  | start no earlier than 2014-09-10 | Dave Taylor | 8h |  |
| 147 | 1.13.7 | JMS message receiver. |  | start no earlier than 2014-09-11 | Dave Taylor | 8h |  |
| 148 | 1.13.8 | JMS message sender |  | start no earlier than 2014-09-11 | Dave Taylor | 8h |  |
| 149 | 1.13.9 | Send update message to GUI (from FE server) |  | start no earlier than 2014-09-15 | Dave Taylor | 8h |  |
| 150 | 1.13.10 | Add JMS topic for updates to GUI |  | start no earlier than 2014-09-16 | Dave Taylor | 8h |  |
| 151 | 1.14 | **Inventory Service/Manager** |  |  |  |  |  |
| 152 | 1.14.1 | Design | 100% | start no earlier than 2014-08-11 | Dave Taylor | 8h | 8h |
| 153 | 1.14.2 | Create and save inventory and change and consistency rules | 100% | start no earlier than 2014-08-13 | Dave Taylor | 8h | 8h |
| 154 | 1.14.3 | Modify and save inventory and change and consistency rules | 100% | start no earlier than 2014-08-14 | Dave Taylor | 8h | 8h |
| 155 | 1.14.4 | Delete inventory rule | 100% | start no earlier than 2014-08-15 | Dave Taylor | 8h | 8h |
| 156 | 1.14.5 | Run as scheduled times controlled by the discovery service |  | start no earlier than 2014-08-18 | Dave Taylor | 8h |  |
| 157 | 1.14.6 | Save previous version |  | start no earlier than 2014-08-19 | Dave Taylor | 8h |  |
| 158 | 1.14.7 | Identify differences based on rules |  | start no earlier than 2014-08-20 | Dave Taylor | 8h |  |
| 159 | 1.14.8 | Send events as defined in rules |  | start no earlier than 2014-08-21 | Dave Taylor | 8h |  |
| 160 | 1.14.9 | List changes for UI |  | start no earlier than 2014-09-18 | Dave Taylor | 8h |  |

| ID | WBS | Task | Constraint | Resources | Work |
| --- | --- | --- | --- | --- | --- |
| 161 | 1.15 | **Reporting Service** |  |  |  |
| 162 | 1.15.1 | Create and save report definition and related objects | start no earlier than 2014-09-24 | Dave Taylor | 8h |
| 163 | 1.15.2 | Delete report definition and related objects | start no earlier than 2014-09-29 | Dave Taylor | 8h |
| 164 | 1.15.3 | Modify existing report definition and related objects. |  | Dave Taylor | 8h |
| 165 | 1.15.4 | Generate reports in specified formats. | start no earlier than 2014-09-19 | Dave Taylor | 8h |
| 166 | 1.15.5 | Email as required | start no earlier than 2014-09-25 | Dave Taylor | 8h |
| 167 | 1.15.6 | Send events as required | start no earlier than 2014-09-30 | Dave Taylor | 8h |
| 168 | 1.15.7 | Output (see external integration) | start no earlier than 2014-09-26 | Dave Taylor | 8h |
| 169 | 1.16 | **External Integration** |  |  |  |
| 170 | 1.16.1 | Export to JSON (this is part of reporting but may involve some sort of file transfer). | start no earlier than 2014-09-22 | Dave Taylor | 8h |
| 171 | 1.16.2 | ServiceNow integration via the RESTful interface they provide. | start no earlier than 2014-09-23 | Dave Taylor | 8h |
| 172 | 1.17 | **Calendar-Specific Functions including modifications to UI** |  |  |  |
| 173 | 1.17.1 | Calendar function design and document review |  | Dave Taylor; Joel Huang; Jon Saperia | 8h |
| 174 | 1.17.2 | Discovery rule and IpTopology Seed calendar implementation this includes tasks for general use of calendar in the system by other components like reporting and the inventory manager. |  | Dave Taylor | 8h |
| 175 | 1.17.3 | Support creation, editing and deletions of calendars in the for inventory rules |  | Dave Taylor | 8h |
| 176 | 1.17.4 | Calendar support for reporting and data export |  | Dave Taylor | 8h |
| 177 | 1.17.5 | Calendar Policy for users, groups, roles |  | Dave Taylor | 8h |
| 178 | 1.17.6 | Schedule Manager |  | Dave Taylor | 8h |
| 179 | 1.17.7 | Definition of calendar types, recurring, one-shot. |  | Dave Taylor | 8h |
| 180 | 1.17.8 | Calendar - get status of a task, Stop a task |  | Dave Taylor | 8h |
| 181 | 1.18 | **Data storage and server logic to support user interface.** |  |  |  |
| 182 | 1.18.1 | Topology link, subnet and path information | start no earlier than 2014-08-28 | Dave Taylor | 8h |
| 183 | 1.18.2 | Service Element Information | start no earlier than 2014-08-29 | Dave Taylor | 8h |
| 184 | 1.18.3 | **Selections** |  |  |  |
| 185 | 1.18.3.1 | API to get InterDeviceLinks by selection (limited) |  | Dave Taylor | 8h |
| 186 | 1.18.3.2 | API to get ServiceElements by Selection (limited) |  | Dave Taylor | 8h |
| 187 | 1.18.3.3 | API to get Network objects by selection (limited) |  | Dave Taylor | 8h |

Notes:
- 180: Arial / left / left-to-right / 12 / 36 / The calendar service will / Arial / left / left-to-right / 12 / 36 / start the quartz service on startup / Arial / left / left-to-right / 12 / 36 / stop the quartz service when the server shuts down. / Arial / left / left-to-right / 12 / 36 / hold a reference to the quartz service. / Arial / left / left-to-right / 12 / 36 / This will hide quartz from the rest of the system. No call are allowed timer.
- 185: Arial / 14 / left / left-to-right / 36 / 36 / 11L,36L / • API go get InterDeviceLink’s by selection (limited to) / Arial / 14 / left / left-to-right / 36 / 36 / 11L,36L / • By Network / Arial / 14 / left / left-to-right / 36 / 36 / 11L,36L / • By Technology / Arial / 14 / left / left-to-right / 36 / 36 / 11L,36L / • By Category / Arial / 14 / left / left-to-right / 36 / 36 / 11L,36L / • By any combination of network, technology or category
- 186: Arial / 14 / left / left-to-right / 36 / 36 / 11L,36L / • API to get ServiceElements by Selection (limited to) / Arial / 14 / left / left-to-right / 36 / 36 / 11L,36L / • By Network / Arial / 14 / left / left-to-right / 36 / 36 / 11L,36L / • By Technology / Arial / 14 / left / left-to-right / 36 / 36 / 11L,36L / • By Category / Arial / 14 / left / left-to-right / 36 / 36 / 11L,36L / • By any combination of network, technology or category
- 187: Arial / 14 / left / left-to-right / 36 / 36 / 11L,36L / • API go get Network objects by selection. (limited to) / Arial / 14 / left / left-to-right / 36 / 36 / 11L,36L / • technology / Arial / 14 / left / left-to-right / 36 / 36 / 11L,36L / • category / Arial / 14 / left / left-to-right / 36 / 36 / 11L,36L / • Combination of technology and category

| ID | WBS | Task | Complete | Constraint | Resources | Work | Actual work |
| --- | --- | --- | --- | --- | --- | --- | --- |
| 188 | 1.18.4 | **Business Service and Criticality Identification Data Storage support of UI and other Functions** |  |  |  |  |  |
| 189 | 1.18.4.1 | Select service element in user interface and assign criticality |  |  | Dave Taylor | 8h |  |
| 190 | 1.18.4.2 | Select service element in user interface and assign one or more business services |  |  | Dave Taylor | 8h |  |
| 191 | 1.18.4.3 | Select multiple service elements (using usual selection criteria) and assign one or more business services |  |  | Dave Taylor | 8h |  |
| 192 | 1.18.4.4 | Select multiple service elements (using usual selection criteria) and assign a criticality |  |  | Dave Taylor | 8h |  |
| 193 | 1.18.4.5 | Preserve business service and criticality attributes across discovery/topology passes |  |  | Dave Taylor | 8h |  |
| 194 | 1.18.4.6 | Display business service and criticality in user interfaces |  |  | Dave Taylor | 8h |  |
| 195 | 1.18.4.7 | Assign business service based on signature during discovery (signature TBD) |  |  | Dave Taylor | 8h |  |
| 196 | 1.19 | **Domain Knowledge and YAML** |  |  |  |  |  |
| 197 | 1.19.1 | **General Functions** |  |  |  |  |  |
| 198 | 1.19.1.1 | Load new YAML |  | start no earlier than 2014-08-25 | Dave Taylor | 8h |  |
| 199 | 1.19.1.2 | Reload and update existing YAML |  | start no earlier than 2014-08-26 | Dave Taylor | 8h |  |
| 200 | 1.19.1.3 | Delete YAML file |  | start no earlier than 2014-08-27 | Dave Taylor | 8h |  |
| 201 | 1.19.2 | **YAML File Types and Information** |  |  |  |  |  |
| 202 | 1.19.2.1 | For top 10 vendors create YAML for SNMPVendorDiscoveryTemplate and document YAML for entity MIB |  | start no earlier than 2014-09-17 | David Chan | 8h |  |
| 203 | 1.19.2.2 | For top 10 vendors create YAML for SNMPVendorDiscoveryTemplate and document YAML for host resources MIB |  | start no earlier than 2014-09-26 | David Chan | 8h |  |
| 204 | 1.19.2.3 | Category tree | 100% |  | Jon Saperia | 8h | 8h |
| 205 | 1.19.2.4 | Develop YAML signatures and related information for top 15 vendor/models and the subcomponents |  | start no earlier than 2014-09-24 | David Chan | 8h |  |
| 206 | 1.19.2.5 | Technology Tree to last level before mechanisms | 100% |  | Jon Saperia | 8h | 8h |
| 207 | 1.19.2.6 | **Service Element Type Definition** |  |  |  |  |  |
| 208 | 1.19.2.6.1 | Category |  | start no earlier than 2014-09-11 | David Chan | 8h |  |
| 209 | 1.19.2.6.2 | Capability |  | start no earlier than 2014-09-12 | David Chan | 8h |  |
| 210 | 1.19.2.6.3 | Capability to Service Element Management Objects or Groups |  | start no earlier than 2014-09-23 | David Chan | 8h |  |
| 211 | 1.19.2.6.4 | Connection of Capability to mechanisms and technologies |  | start no earlier than 2014-09-29 | David Chan | 8h |  |
| 212 | 1.19.2.7 | Load network elements with community strings |  |  | David Chan | 8h |  |

| ID | WBS | Task | Complete | Resources | Work | Actual work |
| --- | --- | --- | --- | --- | --- | --- |
| 213 | 1.19.2.8 | **Finalization/Revisions of YAML** |  |  |  |  |
| 214 | 1.19.2.8.1 | Hierarchical Locations and grouping |  | Jon Saperia | 8h |  |
| 215 | 1.19.2.8.2 | Association between organization and locations and service providers |  | Jon Saperia | 8h |  |
| 216 | 1.20 | **Installation and Upgrade** |  |  |  |  |
| 217 | 1.20.1 | General install software including requirements checking | 70% | Eric Remington | 8h | 5.6h |
| 218 | 1.20.2 | Install a single server instance in AWS | 100% | Eric Remington | 8h | 8h |
| 219 | 1.20.3 | Install a front and back end instance in AWS | 100% | Eric Remington | 8h | 8h |
| 220 | 1.20.4 | Install a front and back end and distributed discovery system in AWS |  | Eric Remington | 8h |  |
| 221 | 1.20.5 | Adapt AWS installs for data center | 100% | Eric Remington | 8h | 8h |
| 222 | 1.20.6 | Define and implement upgrade from one specific version to the next |  | Eric Remington | 8h |  |
| 223 | 1.20.7 | Documentation for Installation and basic site preparation guide |  | Eric Remington; Mark Bombalicki | 8h |  |
| 224 | 1.21 | **CAS Based Authentication** |  |  |  |  |
| 225 | 1.21.1 | Access via CAS |  | Dave Taylor | 8h |  |
| 226 | 1.21.2 | Access via a two factor authentication system via CAS this includes configuration of the FE and BE for different URLs |  | Dave Taylor | 8h |  |
| 227 | 1.21.3 | Document verify that “invalid, self signed” certs may be used in test instances |  | Dave Taylor | 8h |  |
| 228 | 1.22 | **Users and Rolls** |  |  |  |  |
| 229 | 1.22.1 | **Support for multiple users and login/outs creation and association of** |  |  |  |  |
| 230 | 1.22.1.1 | Users |  | Dave Taylor | 8h |  |
| 231 | 1.22.1.2 | Roles |  | Dave Taylor | 8h |  |
| 232 | 1.22.1.3 | Organizations |  | Dave Taylor | 8h |  |
| 233 | 1.22.1.4 | Contacts |  | Dave Taylor | 8h |  |
| 234 | 1.22.1.5 | Access Policy |  | Dave Taylor | 8h |  |
| 235 | 1.22.1.6 | Authentication information |  | Dave Taylor | 8h |  |
| 236 | 1.22.1.7 | Support multiple log-ins to the system |  | Dave Taylor | 8h |  |
| 237 | 1.22.1.8 | Support individual user log-out of the sytem |  | Dave Taylor | 8h |  |
| 238 | 1.22.2 | Modification of any characteristics on an individual or roll basis |  | Dave Taylor | 8h |  |
| 239 | 1.22.3 | Deletion of users or other elements like role |  | Dave Taylor | 8h |  |

| ID | WBS | Task | Predecessors | Complete | Constraint | Resources | Work | Actual work |
| --- | --- | --- | --- | --- | --- | --- | --- | --- |
| 240 | 1.23 | **User Interface** |  |  |  |  |  |  |
| 241 | 1.23.1 | Login |  | 100% |  | Joel Huang | 8h | 8h |
| 242 | 1.23.2 | Finalize menu structure windows and tabs |  |  | start no earlier than 2014-09-19 | Joel Huang | 8h |  |
| 243 | 1.23.3 | Finalize cosmetic style/look and conventions |  |  | start no earlier than 2014-09-22 | Joel Huang | 8h |  |
| 244 | 1.23.4 | **Bug Fixes** |  |  | start no earlier than 2014-08-20 |  |  |  |
| 245 | 1.23.4.1 | Autoscale Screen |  |  | start no earlier than 2014-08-21 | Joel Huang | 4h |  |
| 246 | 1.23.4.2 | Autoscale map | 245 |  | start no earlier than 2014-08-21 | Joel Huang | 4h |  |
| 247 | 1.23.4.3 | Fix Lines - when you zoom in it appears some of the lines are not attached | 246 |  | start no earlier than 2014-08-21 | Joel Huang | 4h |  |
| 248 | 1.23.4.4 | Fix Lines - when you move a node the line becomes detached | 247 |  | start no earlier than 2014-08-21 | Joel Huang | 4h |  |
| 249 | 1.23.4.5 | Fix lines - it is difficult to click on a line | 248 |  | start no earlier than 2014-08-21 | Joel Huang | 4h |  |
| 250 | 1.23.4.6 | Issue with the path list when he expand icon (+) does not display | 249 |  | start no earlier than 2014-08-21 | Joel Huang | 4h |  |
| 251 | 1.23.4.7 | Issue regarding the menu bar being in front of the details window | 250 |  | start no earlier than 2014-08-21 | Joel Huang | 4h |  |
| 252 | 1.23.4.8 | Log out and clear session | 251 |  | start no earlier than 2014-08-21 | Joel Huang | 4h |  |
| 253 | 1.23.4.9 | Know when a session is invalid and direct to login screen | 252 |  | start no earlier than 2014-08-21 | Joel Huang | 4h |  |
| 254 | 1.23.4.10 | Log out button | 253 |  | start no earlier than 2014-08-21 | Joel Huang | 4h |  |
| 255 | 1.23.5 | **Main Screen** |  |  |  |  |  |  |
| 256 | 1.23.5.1 | **Navigation** |  |  |  |  |  |  |
| 257 | 1.23.5.1.1 | From subnet to subnet |  |  | start no earlier than 2014-09-11 | Joel Huang | 8h |  |
| 258 | 1.23.5.1.2 | Returning to previous subnet/screen |  |  | start no earlier than 2014-09-12 | Joel Huang | 8h |  |
| 259 | 1.23.5.1.3 | Navigation of a service element |  |  | start no earlier than 2014-09-15 | Joel Huang | 8h |  |
| 260 | 1.23.5.1.4 | Navigation of paths and inter device links |  |  | start no earlier than 2014-09-05 | Joel Huang | 8h |  |
| 261 | 1.23.5.1.5 | Display information about links and paths |  |  | start no earlier than 2014-08-29 | Joel Huang | 8h |  |
| 262 | 1.23.5.1.6 | Navigation between detail screens (e.g., service element details) |  | 100% |  | Joel Huang | 8h | 8h |
| 263 | 1.23.5.2 | **Information Windows in Main Display** |  |  |  |  |  |  |
| 264 | 1.23.5.2.1 | **Main/top level subnet (all items are result of selection)** |  |  |  |  |  |  |
| 265 | 1.23.5.2.1.1 | Review list of details to display for each of the items in this task grouping with Jon and Dave Taylor |  |  | start no earlier than 2014-09-09 | Joel Huang | 8h |  |
| 266 | 1.23.5.2.1.2 | Show devices of all types |  | 100% |  | Joel Huang | 8h | 8h |
| 267 | 1.23.5.2.1.3 | Show peer and child network connections |  | 100% |  | Joel Huang | 8h | 8h |
| 268 | 1.23.5.2.1.4 | Subnet Information details (would be nice to show all VLANS) this is general information about the subnet |  |  | start no earlier than 2014-09-01 | Joel Huang | 8h |  |
| 269 | 1.23.5.2.1.5 | Show details on paths, links. This is information about the details of each path and link that the user clicks on. | 254 |  | start no earlier than 2014-08-21 | Joel Huang | 8h |  |
| 270 | 1.23.5.2.1.6 | Show Change/Missing Status per device |  |  |  | Joel Huang | 8h |  |
| 271 | 1.23.5.2.1.7 | Last time service element discovery ran |  |  |  | Joel Huang | 8h |  |
| 272 | 1.23.5.2.1.8 | Last time topology ran |  |  |  | Joel Huang | 8h |  |
| 273 | 1.23.5.2.1.9 | Lines between device on screen are the highest level (as defined in input YAML) included in selection |  |  | start no earlier than 2014-09-10 | Joel Huang | 8h |  |

| ID | WBS | Task | Complete | Constraint | Resources | Work | Actual work |
| --- | --- | --- | --- | --- | --- | --- | --- |
| 274 | 1.23.5.2.2 | **Subnets (or non-top level as defined in selection) networks** |  |  |  |  |  |
| 275 | 1.23.5.2.2.1 | Show all information as in main window |  | start no earlier than 2014-09-16 | Joel Huang | 8h |  |
| 276 | 1.23.5.2.2.2 | Show connections to parent networks there may be several |  | start no earlier than 2014-09-17 | Joel Huang | 8h |  |
| 277 | 1.23.5.2.2.3 | Show connections to child and peers |  | start no earlier than 2014-09-03 | Joel Huang | 8h |  |
| 278 | 1.23.6 | **Service Element Information/Display(s)** |  |  |  |  |  |
| 279 | 1.23.6.1 | General Information | 100% |  | Joel Huang | 8h | 8h |
| 280 | 1.23.6.2 | Display additional objects collected in general tab | 100% |  | Joel Huang | 8h | 8h |
| 281 | 1.23.6.3 | **Tabs/information about** |  |  |  |  |  |
| 282 | 1.23.6.3.1 | Discovery state/status/scheduled times |  |  | Joel Huang | 8h |  |
| 283 | 1.23.6.3.2 | Location |  |  | Joel Huang | 8h |  |
| 284 | 1.23.6.3.3 | Technical Services Offered |  |  | Joel Huang | 8h |  |
| 285 | 1.23.6.3.4 | Business services to which it has been assigned |  |  | Joel Huang | 8h |  |
| 286 | 1.23.6.3.5 | Supporting Organization Information |  |  | Joel Huang | 8h |  |
| 287 | 1.23.6.3.6 | Connectivity details - details about all layers of connection in this service element and device |  |  | Joel Huang | 8h |  |
| 288 | 1.23.7 | **Discovery Control and Status** |  |  |  |  |  |
| 289 | 1.23.7.1 | View discovery rules and topology seeds |  | start no earlier than 2014-09-04 | Joel Huang | 8h |  |
| 290 | 1.23.7.2 | Edit existing discovery rule and topology seed |  | start no earlier than 2014-09-05 | Joel Huang | 8h |  |
| 291 | 1.23.7.3 | Delete one or more discovery rules and/or IpTopology seeds |  | start no earlier than 2014-09-18 | Joel Huang | 8h |  |
| 292 | 1.23.7.4 | Start discovery system |  |  | Joel Huang | 8h |  |
| 293 | 1.23.7.5 | Stop discovery system |  |  | Joel Huang | 8h |  |
| 294 | 1.23.7.6 | Create new discovery rule and topology seeds. |  | start no earlier than 2014-09-23 | Joel Huang | 8h |  |
| 295 | 1.23.8 | **Selections** |  |  |  |  |  |
| 296 | 1.23.8.1 | User interface design document and review for selections |  |  | Joel Huang | 8h |  |
| 297 | 1.23.8.2 | When user logs in return them to their last selection |  |  | Joel Huang | 8h |  |
| 298 | 1.23.8.3 | Show user current selection |  |  | Joel Huang | 8h |  |
| 299 | 1.23.8.4 | When user logs in, if no previous selection set, default for the group the user is in. |  |  | Joel Huang | 8h |  |
| 300 | 1.23.8.5 | Pick selection from a list. |  |  | Joel Huang | 8h |  |
| 301 | 1.23.8.6 | Delete and existing selection. |  |  | Joel Huang | 8h |  |
| 302 | 1.23.8.7 | Update an existing selection. |  |  | Joel Huang | 8h |  |
| 303 | 1.23.8.8 | Allow creation of an ad-hoc selection |  |  | Joel Huang | 8h |  |

| ID | WBS | Task | Resources | Work |
| --- | --- | --- | --- | --- |
| 304 | 1.23.8.9 | **Create a Filter** |  |  |
| 305 | 1.23.8.9.1 | **Selecting filter elements based on** |  |  |
| 306 | 1.23.8.9.1.1 | Business service | Joel Huang | 8h |
| 307 | 1.23.8.9.1.2 | Service technologies | Joel Huang | 8h |
| 308 | 1.23.8.9.1.3 | Networks | Joel Huang | 8h |
| 309 | 1.23.8.9.1.4 | Provider | Joel Huang | 8h |
| 310 | 1.23.8.9.1.5 | Criticality | Joel Huang | 8h |
| 311 | 1.23.8.9.1.6 | Category | Joel Huang | 8h |
| 312 | 1.23.8.9.1.7 | Service Element Types | Joel Huang | 8h |
| 313 | 1.23.8.9.1.8 | Location | Joel Huang | 8h |
| 314 | 1.23.8.9.1.9 | Organization | Joel Huang | 8h |
| 315 | 1.23.8.9.2 | Allow for selection of combinations of these filter elements | Joel Huang | 8h |
| 316 | 1.23.8.9.3 | **Select grouping** |  |  |
| 317 | 1.23.8.9.3.1 | Subnet | Joel Huang | 8h |
| 318 | 1.23.8.9.3.2 | Location and Subnet | Joel Huang | 8h |
| 319 | 1.23.8.9.3.3 | Location, service element type and subnet | Joel Huang | 8h |
| 320 | 1.23.8.9.3.4 | Business service and service element type and subnet | Joel Huang | 8h |
| 321 | 1.23.8.9.3.5 | Business service and location | Joel Huang | 8h |
| 322 | 1.23.8.9.3.6 | Business service location and service element type and subnet | Joel Huang | 8h |
| 323 | 1.23.8.9.4 | Include inter-device links and paths or not along with technologies of links | Joel Huang | 8h |
| 324 | 1.23.8.9.5 | **Select layers** |  |  |
| 325 | 1.23.8.9.5.1 | Definition of what data is to be displayed beyond service element 'additional attributes'. | Joel Huang | 8h |
| 326 | 1.23.8.9.5.2 | **Discovery status** |  |  |
| 327 | 1.23.8.9.5.2.1 | New | Joel Huang | 8h |
| 328 | 1.23.8.9.5.2.2 | Missing (along with access in a tool tip or something like to to rule) | Joel Huang | 8h |
| 329 | 1.23.8.9.5.2.3 | Changed (along with change information) | Joel Huang | 8h |

| ID | WBS | Task | Resources | Work |
| --- | --- | --- | --- | --- |
| 330 | 1.23.8.9.6 | **Views** |  |  |
| 331 | 1.23.8.9.6.1 | Graphical form with navigation | Joel Huang | 8h |
| 332 | 1.23.8.9.6.2 | Grid/tabular form (e.g., for screen or report) | Joel Huang | 8h |
| 333 | 1.23.8.9.6.3 | Expandable folder | Joel Huang | 8h |
| 334 | 1.23.8.9.6.4 | Output to alarm | Joel Huang | 8h |
| 335 | 1.23.8.9.6.5 | Output to email | Joel Huang | 8h |
| 336 | 1.23.9 | **Alarm and Event Window** |  |  |
| 337 | 1.23.9.1 | User Interface design document and review for the alarm and event window. | Joel Huang | 8h |
| 338 | 1.23.9.2 | Integer system log | Joel Huang | 8h |
| 339 | 1.23.9.3 | **Discovery Information** |  |  |
| 340 | 1.23.9.3.1 | Ongoing status of running portions like distributed nodes. | Joel Huang | 8h |
| 341 | 1.23.9.3.2 | Status of each manager (topology and service element discovery) | Joel Huang | 8h |
| 342 | 1.23.9.3.3 | Work done to do for each manager | Joel Huang | 8h |
| 343 | 1.23.9.3.4 | Work done/to do for entire service | Joel Huang | 8h |
| 344 | 1.23.9.3.5 | Failures/errors | Joel Huang | 8h |
| 345 | 1.23.9.3.6 | When a discovery is complete | Joel Huang | 8h |
| 346 | 1.23.9.4 | **Inventory Rule Status Violations** |  |  |
| 347 | 1.23.9.4.1 | Missing Devices | Joel Huang | 8h |
| 348 | 1.23.9.4.2 | Changed Devices | Joel Huang | 8h |
| 349 | 1.23.9.4.3 | New Devices | Joel Huang | 8h |
| 350 | 1.23.9.5 | **System Events Window** |  |  |
| 351 | 1.23.9.5.1 | Distributed system events failures | Joel Huang | 8h |
| 352 | 1.23.9.5.2 | Distributed systems events like start and stop. | Joel Huang | 8h |
| 353 | 1.23.10 | **Inventory** |  |  |
| 354 | 1.23.10.1 | User interface design and review for inventory functions | Joel Huang | 8h |
| 355 | 1.23.10.2 | Control status of inventory rules (like enabled or not enabled) | Joel Huang | 8h |
| 356 | 1.23.10.3 | View inventory and inventory change and consistency rules | Joel Huang | 8h |
| 357 | 1.23.10.4 | Edit existing inventory and inventory change and consistency rules | Joel Huang | 8h |
| 358 | 1.23.10.5 | Delete inventory and inventory change and consistency rules | Joel Huang | 8h |
| 359 | 1.23.10.6 | Create inventory and inventory change consistency rules | Joel Huang | 8h |

| ID | WBS | Task | Resources | Work |
| --- | --- | --- | --- | --- |
| 360 | 1.23.11 | **Reporting and Data Export** |  |  |
| 361 | 1.23.11.1 | User interface design and document review for reporting and data export functions | Joel Huang | 8h |
| 362 | 1.23.11.2 | List report templates | Joel Huang | 8h |
| 363 | 1.23.11.3 | Delete report template | Joel Huang | 8h |
| 364 | 1.23.11.4 | Modify existing report template | Joel Huang | 8h |
| 365 | 1.23.11.5 | **Create new template** |  |  |
| 366 | 1.23.11.5.1 | Full inventory listing (of selected elements) | Joel Huang | 8h |
| 367 | 1.23.11.5.2 | Change, added, and missing elements report (based on selections) | Joel Huang | 8h |
| 368 | 1.23.11.6 | List saved reports | Joel Huang | 8h |
| 369 | 1.23.11.7 | View one or more saved reports | Joel Huang | 8h |
| 370 | 1.23.12 | **Search Functions** |  |  |
| 371 | 1.23.12.1 | User Interface design and review for search functions | Joel Huang | 8h |
| 372 | 1.23.12.2 | Search within selection - that is search is confined to the current selection. | Joel Huang | 8h |
| 373 | 1.23.12.3 | Search in entire system. | Joel Huang | 8h |
| 374 | 1.23.12.4 | **Search based on values entered for:** |  |  |
| 375 | 1.23.12.4.1 | Address | Joel Huang | 8h |
| 376 | 1.23.12.4.2 | DNS Name | Joel Huang | 8h |
| 377 | 1.23.12.4.3 | Category | Joel Huang | 8h |
| 378 | 1.23.12.4.4 | Subnet or VLAN | Joel Huang | 8h |
| 379 | 1.23.12.4.5 | Location name | Joel Huang | 8h |
| 380 | 1.23.12.4.6 | Business service | Joel Huang | 8h |
| 381 | 1.23.13 | **System Control and Management** |  |  |
| 382 | 1.23.13.1 | **Manage distributed elements** |  |  |
| 383 | 1.23.13.1.1 | Start and stop/restart | Joel Huang | 8h |
| 384 | 1.23.13.1.2 | Assign Discovery Rules | Joel Huang | 8h |

| ID | WBS | Task | Constraint | Resources | Work |
| --- | --- | --- | --- | --- | --- |
| 385 | 1.23.13.2 | **Service Element Type specific parameters** |  |  |  |
| 386 | 1.23.13.2.1 | SNMP Time outs and retries for discovery manager |  | Joel Huang | 8h |
| 387 | 1.23.13.2.2 | SNMP Time outs and retries for topology manager. |  | Joel Huang | 8h |
| 388 | 1.23.13.3 | Global SNMP Credential list. | start no earlier than 2014-09-02 | Joel Huang | 8h |
| 389 | 1.23.14 | Help functions |  | Joel Huang | 8h |
| 390 | 1.23.15 | **Log-in and out and user functions** |  |  |  |
| 391 | 1.23.15.1 | Log out of system |  | Joel Huang | 8h |
| 392 | 1.23.15.2 | **Support of User administration** |  |  |  |
| 393 | 1.23.15.2.1 | User interface design and document review for user administration functions |  | Joel Huang | 8h |
| 394 | 1.23.15.2.2 | **Create** |  |  |  |
| 395 | 1.23.15.2.2.1 | Users |  | Joel Huang | 8h |
| 396 | 1.23.15.2.2.2 | Groups |  | Joel Huang | 8h |
| 397 | 1.23.15.2.2.3 | Roles |  | Joel Huang | 8h |
| 398 | 1.23.15.2.2.4 | Organizations |  | Joel Huang | 8h |
| 399 | 1.23.15.2.2.5 | Contacts |  | Joel Huang | 8h |
| 400 | 1.23.15.2.2.6 | Access Policy |  | Joel Huang | 8h |
| 401 | 1.23.15.2.2.7 | Authentication Information |  | Joel Huang | 8h |
| 402 | 1.23.15.2.3 | Modification of Users, groups, roles, organizations, contacts, authentication, and access policy |  | Joel Huang | 8h |
| 403 | 1.23.15.2.4 | Delete users, groups, roles, organizations, contacts, authentication and access policy |  | Joel Huang | 8h |
| 404 | 1.23.16 | **Business Service and Criticality Identification** |  |  |  |
| 405 | 1.23.16.1 | User interface design and document review for business service and criticality identification |  |  | 8h |
| 406 | 1.23.16.2 | Select service element in user interface and assign criticality |  | Joel Huang | 8h |
| 407 | 1.23.16.3 | Select service element in user interface and assign one or more business services |  | Joel Huang | 8h |
| 408 | 1.23.16.4 | Select multiple service elements (using usual selection criteria) and assign one or more business services |  | Joel Huang | 8h |
| 409 | 1.23.16.5 | Select multiple service elements (using usual selection criteria) and assign a criticality |  | Joel Huang | 8h |
| 410 | 1.23.16.6 | Display business service and criticality in user interfaces |  | Joel Huang | 8h |
| 411 | 1.23.16.7 | Modify/remove service elements from a business service |  | Joel Huang | 8h |
